# caB2BIterationWiseMPP

Schedule from MS Project, 2007-02-16 to 2007-04-27, A marks actual dates.
Persistent Systems Pvt. Ltd.

## Calendars

- Standard: Mon-Fri 08:00-12:00, 13:00-17:00; Sat-Sun off.

## Resources

| Resource |
| --- |
| Chandrakant |
| Srinath |
| Chetan |
| Mahesh |
| Pratibha |
| Deepak |
| All |
| Sayali |
| Hrishikesh |
| Sreekanth |

## Schedule

| ID | WBS | Task | Type | Duration | Start | Finish | Predecessors | Complete | Remaining | Total slack | Free slack | Constraint | Resources | Work | Actual work | Text1 |
| --- | --- | --- | --- | --- | --- | --- | --- | --- | --- | --- | --- | --- | --- | --- | --- | --- |
| 1 | 1 | **Feb Iteration** |  | 3d? | 2007-02-16 A | 2007-02-20 |  | 95% | 0.15d? | 48d |  |  |  | 112h | 106.4h |  |
| 2 | 1.1 | Import inheritance to metadata |  | 1d | 2007-02-16 A | 2007-02-16 A |  | 100% |  |  |  |  | Chandrakant | 8h | 8h |  |
| 3 | 1.2 | Unidirectional associations |  | 1d | 2007-02-16 A | 2007-02-16 A |  | 100% |  |  |  |  | Mahesh | 8h | 8h |  |
| 4 | 1.3 | Apply all in add to data list |  | 3d | 2007-02-16 A | 2007-02-20 A |  | 100% |  |  |  |  | Pratibha | 24h | 24h |  |
| 5 | 1.4 | Data list summary |  | 2d | 2007-02-16 A | 2007-02-19 A |  | 100% |  |  |  |  | Deepak | 16h | 16h |  |
| 6 | 1.5 | Export button in step 5 of serach wizard |  | 3d | 2007-02-16 A | 2007-02-20 A | 4 | 100% |  |  |  |  | Pratibha | 24h | 24h |  |
| 7 | 1.6 | Remove client jar dependency |  | 1d? | 2007-02-16 A | 2007-02-16 A |  | 100% |  |  |  |  | Srinath | 8h | 8h |  |
| 8 | 1.7 | Design document |  | 1d? | 2007-02-16 A | 2007-02-16 |  | 80% | 0.2d? | 50d |  |  | All | 8h | 6.4h |  |
| 9 | 1.8 | User manual |  | 1d? | 2007-02-16 A | 2007-02-16 |  | 80% | 0.2d? | 50d |  |  | Sayali | 8h | 6.4h |  |
| 10 | 1.9 | Testing on Mac, Linux |  | 1d? | 2007-02-16 A | 2007-02-16 |  | 70% | 0.3d? | 50d |  |  | Sayali | 8h | 5.6h |  |
| 11 | 2 | **Mar Iteration** |  | 22d? | 2007-03-01 | 2007-03-30 |  |  |  | 9d |  |  |  | 976h |  |  |
| 12 | 2.1 | **Inheritance** |  | 7d? | 2007-03-05 | 2007-03-13 |  |  |  | 21d |  |  |  | 56h |  |  |
| 13 | 2.1.1 | Path interpretation |  | 5d | 2007-03-05 | 2007-03-09 |  |  |  | 21d | 0d | start no earlier than 2007-03-05 | Chandrakant | 40h |  |  |
| 14 | 2.1.2 | Query module testing |  | 2d? | 2007-03-12 | 2007-03-13 | 13, 31 |  |  | 23d | 0d |  | Srinath | 16h |  |  |
| 15 | 2.2 | **Storing curated paths** |  | 6d | 2007-03-12 | 2007-03-19 |  |  |  | 21d |  |  |  | 48h |  |  |
| 16 | 2.2.1 | Backend |  | 4d | 2007-03-12 | 2007-03-15 | 13 |  |  | 21d | 0d |  | Chandrakant | 32h |  |  |
| 17 | 2.2.2 | Ambiguity Resolver UI change |  | 2d | 2007-03-16 | 2007-03-19 | 16 |  |  | 29d | 0d |  | Deepak | 16h |  |  |
| 18 | 2.3 | Mid March Release | milestone | 0d | 2007-03-19 | 2007-03-19 | 17 |  |  | 29d |  |  |  |  |  |  |
| 19 | 2.4 | **Bug Fixes** |  | 2d | 2007-03-06 | 2007-03-07 |  |  |  | 37d |  |  |  | 16h |  |  |
| 20 | 2.4.1 | Bug# 3502: Urls are set incorrectly in interModelAssociations |  | 2d | 2007-03-06 | 2007-03-07 |  |  |  | 37d |  | start no earlier than 2007-03-06 | Mahesh | 16h |  |  |
| 21 | 2.5 | **Enhancements to metadata search** |  | 6d | 2007-03-05 | 2007-03-12 |  |  |  | 22d |  |  |  | 48h |  | P1 |
| 22 | 2.5.1 | Backend |  | 4d | 2007-03-05 | 2007-03-08 |  |  |  | 22d | 0d | start no earlier than 2007-03-05 | Hrishikesh | 32h |  |  |
| 23 | 2.5.2 | User Interface |  | 2d | 2007-03-09 | 2007-03-12 | 22 |  |  | 34d |  |  | Deepak | 16h |  |  |
| 24 | 2.6 | **Create Experiment** |  | 11d | 2007-03-05 | 2007-03-19 |  |  |  | 26d |  |  |  | 72h |  | P1 |
| 25 | 2.6.1 | Backend support for saving newly created experiment |  | 7d | 2007-03-09 | 2007-03-19 | 22 |  |  | 22d | 0d |  | Hrishikesh | 56h |  |  |
| 26 | 2.6.2 | UI wizard to create new experiment (Slide 63) |  | 2d | 2007-03-05 | 2007-03-06 |  |  |  | 38d |  | start no earlier than 2007-03-05 | Deepak | 16h |  |  |

Notes:
- 18: Mid March Release
- 24: 1. Functionality to create experiment from data list added content. This release will always create new experiment from the data list contents

| ID | WBS | Task | Type | Duration | Start | Finish | Predecessors | Total slack | Free slack | Constraint | Resources | Work | Text1 |
| --- | --- | --- | --- | --- | --- | --- | --- | --- | --- | --- | --- | --- | --- |
| 27 | 2.7 | **Open Experiment** |  | 4d | 2007-03-20 | 2007-03-23 |  | 22d |  |  |  | 32h | P1 |
| 28 | 2.7.1 | backend support for fetching experiment details |  | 2d | 2007-03-20 | 2007-03-21 | 25 | 22d | 0d |  | Hrishikesh | 16h |  |
| 29 | 2.7.2 | UI for opening an experiment (Slide 43) |  | 2d | 2007-03-22 | 2007-03-23 | 28 | 25d |  |  | Deepak | 16h |  |
| 30 | 2.8 | **Server issues** |  | 21d | 2007-03-01 | 2007-03-29 |  | 9d |  |  |  | 176h | P1 |
| 31 | 2.8.1 | Category Output backend |  | 7d | 2007-03-01 | 2007-03-09 |  | 9d | 0d | start no earlier than 2007-03-01 | Srinath | 56h |  |
| 32 | 2.8.2 | Category Output backend integration and testing |  | 5d | 2007-03-14 | 2007-03-20 | 14 | 23d | 0d |  | Srinath | 40h |  |
| 33 | 2.8.3 | WS enumeration based data services to lazy load large data sets |  | 5d | 2007-03-16 | 2007-03-22 | 16 | 21d | 0d |  | Chandrakant | 40h |  |
| 34 | 2.8.4 | Handling large datasets |  | 5d | 2007-03-23 | 2007-03-29 | 33 | 21d |  |  | Chandrakant | 40h |  |
| 35 | 2.9 | UI Fixes (Refer to UI-bugs excelsheet) |  | 9d | 2007-03-05 | 2007-03-15 |  | 31d |  | start no earlier than 2007-03-05 | Chetan | 72h | P2 |
| 36 | 2.10 | View Category in results |  | 7d | 2007-03-12 | 2007-03-20 | 31 | 9d | 0d |  | Chetan | 56h |  |
| 37 | 2.11 | DAG-Connect All functionality |  | 5d | 2007-03-05 | 2007-03-09 |  | 35d |  | start no earlier than 2007-03-05 | Pratibha | 40h |  |
| 38 | 2.12 | **Data services** |  | 20d | 2007-03-05 | 2007-03-30 |  | 20d |  |  |  | 160h |  |
| 39 | 2.12.1 | caTissue extended models (with caArray) |  | 10d | 2007-03-05 | 2007-03-16 |  | 20d | 0d | start no earlier than 2007-03-05 |  |  |  |
| 40 | 2.12.2 | caArray data related to extended model. |  | 5d | 2007-03-19 | 2007-03-23 | 39 | 20d | 0d |  | Sreekanth; Pratibha | 80h |  |
| 41 | 2.12.3 | Extended caFE model for caArray (Grid Sevice) |  | 5d | 2007-03-26 | 2007-03-30 | 40 | 20d |  |  | Chandrakant | 40h |  |
| 42 | 2.12.4 | GenePattern analysis service investigation and design |  | 5d | 2007-03-22 | 2007-03-28 | 28 | 22d |  |  | Hrishikesh | 40h |  |
| 43 | 2.13 | Testing and bug fixes |  | 7d | 2007-03-22 | 2007-03-30 |  | 20d |  | start no earlier than 2007-03-22 | Sayali; Deepak | 112h |  |
| 44 | 2.14 | Release notes |  | 1d | 2007-03-30 | 2007-03-30 |  | 6d | 0d | start no earlier than 2007-03-30 | Mahesh | 8h |  |
| 45 | 2.15 | Updated design document |  | 5d | 2007-03-26 | 2007-03-30 |  | 20d |  | start no earlier than 2007-03-26 | All | 40h |  |
| 46 | 2.16 | End user manual (On going task) |  | 5d | 2007-03-26 | 2007-03-30 |  | 20d |  | start no earlier than 2007-03-26 | Sayali | 40h |  |
| 47 | 2.17 | March iteration release | milestone | 0d | 2007-03-30 | 2007-03-30 | 44 | 6d | 0d |  | All |  |  |
| 48 | 3 | **Apr Iteration** |  | 28d | 2007-03-21 | 2007-04-27 |  | 0d |  |  |  | 800h |  |
| 49 | 3.1 | Download UML from caDSR |  | 5d | 2007-04-02 | 2007-04-06 | 47 | 6d | 0d |  | Chandrakant | 40h | P2 |
| 50 | 3.2 | Relevance based metadata search |  | 7d | 2007-04-02 | 2007-04-10 |  | 8d | 0d | start no earlier than 2007-04-02 | Hrishikesh | 56h | P2 |

Notes:
- 29: 1. "Create new experiment" button not supported for this release

| ID | WBS | Task | Type | Duration | Start | Finish | Predecessors | Total slack | Free slack | Constraint | Resources | Work | Text1 |
| --- | --- | --- | --- | --- | --- | --- | --- | --- | --- | --- | --- | --- | --- |
| 51 | 3.3 | **Experiment Data Catgetory** |  | 9d | 2007-03-21 | 2007-04-02 |  | 9d |  |  |  | 112h |  |
| 52 | 3.3.1 | UI for data category hierarachy (Slide 44) |  | 5d | 2007-03-21 | 2007-03-27 | 36 | 9d | 0d |  | Chetan | 40h | P2 |
| 53 | 3.3.2 | Backend to get data for selected category |  | 5d | 2007-03-21 | 2007-03-27 | 32 | 23d |  |  | Srinath | 40h |  |
| 54 | 3.3.3 | Handle onClick event of category |  | 2d | 2007-03-28 | 2007-03-29 | 52 | 9d | 0d |  | Chetan | 16h |  |
| 55 | 3.3.4 | Search in data category? |  | 2d | 2007-03-30 | 2007-04-02 | 54 | 9d | 0d |  | Chetan | 16h |  |
| 56 | 3.4 | **View experiement data sheet** |  | 7d | 2007-04-02 | 2007-04-10 |  | 5d |  |  |  | 56h |  |
| 57 | 3.4.1 | UI for showing spreadsheet of selected category dataset |  | 5d | 2007-04-02 | 2007-04-06 |  | 5d | 0d | start no earlier than 2007-04-02 | Deepak | 40h |  |
| 58 | 3.4.2 | Hide/Unhide columns in the spreadsheet |  | 2d | 2007-04-09 | 2007-04-10 | 57 | 5d | 0d |  | Deepak | 16h |  |
| 59 | 3.5 | **Visualizations for experiment datasets** |  | 14d | 2007-04-02 | 2007-04-19 |  | 6d |  |  |  | 64h |  |
| 60 | 3.5.1 | Plotting selected dataset columns as a graph (like Sigma plot) |  | 4d | 2007-04-02 | 2007-04-05 |  | 16d |  | start no earlier than 2007-04-02 | Mahesh | 32h |  |
| 61 | 3.5.2 | CDE based literature network viewer |  | 4d | 2007-04-16 | 2007-04-19 | 66 | 6d |  |  | Chandrakant | 32h |  |
| 62 | 3.6 | **Analytical services** |  | 11d | 2007-04-03 | 2007-04-17 |  | 8d |  |  |  | 160h |  |
| 63 | 3.6.1 | Genepattern analytical service support |  | 5d | 2007-04-11 | 2007-04-17 | 50 | 8d |  |  | Hrishikesh | 40h |  |
| 64 | 3.6.2 | dynamic UI generation for selected analytical service |  | 5d | 2007-04-03 | 2007-04-09 | 55 | 9d | 0d |  | Chetan | 40h |  |
| 65 | 3.6.3 | Report tab for analysis to see status of different anlysis |  | 5d | 2007-04-10 | 2007-04-16 | 64 | 9d |  |  | Chetan | 40h |  |
| 66 | 3.6.4 | Backend support to search for analytical service instance and execute query on same |  | 5d | 2007-04-09 | 2007-04-13 | 49 | 6d | 0d |  | Chandrakant | 40h |  |
| 67 | 3.7 | **Filter Experiment Data set** |  | 8d | 2007-04-11 | 2007-04-20 |  | 5d |  |  |  | 64h |  |
| 68 | 3.7.1 | UI to filter data set |  | 5d | 2007-04-11 | 2007-04-17 | 58 | 5d | 0d |  | Deepak | 40h |  |
| 69 | 3.7.2 | create category for with filtered data-set |  | 3d | 2007-04-18 | 2007-04-20 | 68 | 5d |  |  | Deepak | 24h |  |
| 70 | 3.8 | **DAG** |  | 15d | 2007-04-02 | 2007-04-20 |  | 5d |  |  |  | 120h | P2 |
| 71 | 3.8.1 | Parenthesis support |  | 5d | 2007-04-02 | 2007-04-06 |  | 5d | 0d | start no earlier than 2007-04-02 | Pratibha | 40h | P3 |
| 72 | 3.8.2 | show / hide intermediate nodes |  | 5d | 2007-04-09 | 2007-04-13 | 71 | 5d | 0d |  | Pratibha | 40h | P1 |
| 73 | 3.8.3 | Ambiguity resolver with path popularity and graph |  | 5d | 2007-04-16 | 2007-04-20 | 72 | 5d |  |  | Pratibha | 40h | P3 |
| 74 | 3.9 | Testing and bug fixes |  | 5d | 2007-04-23 | 2007-04-27 |  | 0d |  | start no earlier than 2007-04-23 | Sayali | 40h |  |
| 75 | 3.10 | Release notes |  | 1d | 2007-04-27 | 2007-04-27 |  | 0d |  | start no earlier than 2007-04-27 | Mahesh | 8h |  |
| 76 | 3.11 | End user manual |  | 5d | 2007-04-23 | 2007-04-27 |  | 0d |  | start no earlier than 2007-04-23 | Sayali | 40h |  |
| 77 | 3.12 | Updated design document |  | 5d | 2007-04-23 | 2007-04-27 |  | 0d |  | start no earlier than 2007-04-23 | All | 40h |  |
| 78 | 3.13 | April iteration (Beta release) | milestone | 0d | 2007-04-27 | 2007-04-27 |  | 1d |  | start no earlier than 2007-04-27 | All |  |  |

Notes:
- 52: 1. "Create custom category" button not supported
- 57: 1. Formula drop-down not required. / 2. The functionality should be similar to Excelsheet

| ID | WBS | Task | Type | Duration | Start | Finish | Total slack | Text1 |
| --- | --- | --- | --- | --- | --- | --- | --- | --- |
| 79 | 4 | **May Iteration** |  | 10d? | 2007-02-16 | 2007-03-01 | 41d |  |
| 80 | 4.1 | **User authentication** |  | 5d | 2007-02-16 | 2007-02-22 | 46d | P2 |
| 81 | 4.1.1 | login screen |  | 2d | 2007-02-16 | 2007-02-19 | 49d |  |
| 82 | 4.1.2 | backend support to authenticate user |  | 5d | 2007-02-16 | 2007-02-22 | 46d | P2 |
| 83 | 4.2 | **Administartive Tasks** |  | 7d | 2007-02-16 | 2007-02-26 | 44d |  |
| 84 | 4.2.1 | UI for define categories |  | 7d | 2007-02-16 | 2007-02-26 | 44d | P2 |
| 85 | 4.2.2 | UI to curate paths |  | 5d | 2007-02-16 | 2007-02-22 | 46d | P2 |
| 86 | 4.2.3 | UI for data service selection while executing queries |  | 5d | 2007-02-16 | 2007-02-22 | 46d |  |
| 87 | 4.2.4 | Auto-download domain models |  | 5d | 2007-02-16 | 2007-02-22 | 46d | P2 |
| 88 | 4.2.5 | UI for path curation (For DAG view) |  | 3d | 2007-02-16 | 2007-02-20 | 48d | P2 |
| 89 | 4.3 | Advance result view |  | 7d | 2007-02-16 | 2007-02-26 | 44d |  |
| 90 | 4.4 | **Home Page** |  | 7d | 2007-02-16 | 2007-02-26 | 44d |  |
| 91 | 4.4.1 | Popular category UI and backend support |  | 3d | 2007-02-16 | 2007-02-20 | 48d | P2 |
| 92 | 4.4.2 | My categories UI and backend support |  | 3d | 2007-02-16 | 2007-02-20 | 48d | P2 |
| 93 | 4.4.3 | My experiments |  | 3d | 2007-02-16 | 2007-02-20 | 48d | P2 |
| 94 | 4.4.4 | My searched Queries |  | 3d | 2007-02-16 | 2007-02-20 | 48d | P2 |
| 95 | 4.4.5 | **My Data List** |  | 7d | 2007-02-16 | 2007-02-26 | 44d |  |
| 96 | 4.4.5.1 | join data list |  | 7d | 2007-02-16 | 2007-02-26 | 44d |  |
| 97 | 4.5 | **Experiment** |  | 10d | 2007-02-16 | 2007-03-01 | 41d |  |
| 98 | 4.5.1 | support for different analytical services |  | 5d | 2007-02-16 | 2007-02-22 | 46d |  |
| 99 | 4.5.2 | support for Clustrering algorithms (UI + backend) |  | 10d | 2007-02-16 | 2007-03-01 | 41d |  |
| 100 | 4.5.3 | Pathway viewer |  | 5d | 2007-02-16 | 2007-02-22 | 46d |  |
| 101 | 4.5.4 | Create custom data categories |  | 5d | 2007-02-16 | 2007-02-22 | 46d |  |
| 102 | 4.5.5 | Add dataset to existing experiment |  | 5d | 2007-02-16 | 2007-02-22 | 46d |  |
| 103 | 4.5.6 | delete /modify experiment |  | 3d | 2007-02-16 | 2007-02-20 | 48d |  |
| 104 | 4.6 | query and apply existing query |  | 7d | 2007-02-16 | 2007-02-26 | 44d |  |
| 105 | 4.7 | Testing and bug fixes |  | 7d | 2007-02-16 | 2007-02-26 | 44d |  |
| 106 | 4.8 | End user manual |  | 5d | 2007-02-16 | 2007-02-22 | 46d |  |
| 107 | 4.9 | Release notes |  | 2d | 2007-02-16 | 2007-02-19 | 49d |  |
| 108 | 4.10 | Updated design document |  | 5d | 2007-02-16 | 2007-02-22 | 46d |  |
| 109 | 4.11 | Beta Release to adopters | milestone | 0d | 2007-02-16 | 2007-02-16 | 51d |  |
| 110 | 4.12 | Beta testing by adopters |  | 1d? | 2007-02-16 | 2007-02-16 | 50d |  |
| 111 | 4.13 | Beta release bug fixes |  | 1d? | 2007-02-16 | 2007-02-16 | 50d |  |
| 112 | 4.14 | Installation guide |  | 5d | 2007-02-16 | 2007-02-22 | 46d |  |
| 113 | 4.15 | user manual |  | 5d | 2007-02-16 | 2007-02-22 | 46d |  |
| 114 | 4.16 | Test cases and test execution report |  | 1d | 2007-02-16 | 2007-02-16 | 50d |  |
| 115 | 4.17 | Final design document |  | 5d | 2007-02-16 | 2007-02-22 | 46d |  |
| 116 | 4.18 | Final usecase document |  | 1d | 2007-02-16 | 2007-02-16 | 50d |  |
| 117 | 4.19 | Lessons learned document |  | 2d | 2007-02-16 | 2007-02-19 | 49d |  |
| 118 | 4.20 | Final release |  | 2d | 2007-02-16 | 2007-02-19 | 49d |  |

Notes:
- 80: Pull this in April Release
