# Year 3 Project Plan 7 30

Schedule from MS Project, 2008-07-14 to 2008-12-19, A marks actual dates.
Persistent Systems Pvt. Ltd.

## Calendars

- Standard: Mon-Fri 08:00-12:00, 13:00-17:00; Sat-Sun off. Exceptions (off unless hours are given): 2008-08-15 (Holiday), 2008-10-28 (Holiday).

## Resources

| Resource |
| --- |
| Chandrakant Talele |
| Lalit Chand |
| Chetan Patil |
| Atul Jawale |
| Hrishikesh Rajpathak |
| Rushikesh Subhedar |
| Deepak Shingan |
| Madhumita |
| Guarav |

## Schedule

| ID | WBS | Task | Duration | Start | Finish | Predecessors | Complete | Constraint | Resources | Work | Actual work |
| --- | --- | --- | --- | --- | --- | --- | --- | --- | --- | --- | --- |
| 1 | 1 | **Year 3 Release1** | 103d? | 2008-07-14 A | 2008-12-05 A |  | 100% |  |  | 2144h | 2144h |
| 2 | 1.1 | **caB2B_Y3_020Technology Stack Migration** | 34d | 2008-07-14 A | 2008-08-29 A |  | 100% |  |  | 144h | 144h |
| 3 | 1.1.1 | **Migrate to Jboss 4.0.5 GA** | 2d | 2008-07-14 A | 2008-07-15 A |  | 100% |  |  | 16h | 16h |
| 4 | 1.1.1.1 | Changes in existing codebase | 1d | 2008-07-14 A | 2008-07-14 A |  | 100% | start no earlier than 2008-07-14 | Lalit Chand | 8h | 8h |
| 5 | 1.1.1.2 | Changes in deployment process | 1d | 2008-07-15 A | 2008-07-15 A | 4 | 100% |  | Lalit Chand | 8h | 8h |
| 6 | 1.1.2 | **Query Module** | 12d | 2008-08-04 A | 2008-08-20 A |  | 100% |  |  | 88h | 88h |
| 7 | 1.1.2.1 | Query Module Release UI | 3d | 2008-08-18 A | 2008-08-20 A |  | 100% |  | Deepak Shingan | 24h | 24h |
| 8 | 1.1.2.2 | Query Module Release backend changes | 8d | 2008-08-04 A | 2008-08-20 A |  | 100% |  | Chetan Patil | 64h | 64h |
| 9 | 1.1.3 | **Moving to caGrid 1.2** | 5d | 2008-08-25 A | 2008-08-29 A |  | 100% |  |  | 40h | 40h |
| 10 | 1.1.3.1 | caB2B Finding & Replacing appropriate jars | 2d | 2008-08-25 A | 2008-08-26 A |  | 100% | start no earlier than 2008-08-25 | Deepak Shingan | 16h | 16h |
| 11 | 1.1.3.2 | Admin Finding & Replacing appropriate jars | 2d | 2008-08-27 A | 2008-08-28 A | 10 | 100% |  | Deepak Shingan | 16h | 16h |
| 12 | 1.1.3.3 | Testing | 1d | 2008-08-29 A | 2008-08-29 A | 11 | 100% |  | Deepak Shingan | 8h | 8h |
| 13 | 1.2 | **caB2B_Y3_001-Automatic cache update between admin and cab2b server** | 22d | 2008-09-01 A | 2008-09-30 A |  | 100% |  |  | 176h | 176h |
| 14 | 1.2.1 | Requirement | 1d | 2008-09-01 A | 2008-09-01 A | 63 | 100% |  | Hrishikesh Rajpathak | 8h | 8h |
| 15 | 1.2.2 | **Investigation** | 18d | 2008-09-02 A | 2008-09-25 A | 14 | 100% |  |  | 144h | 144h |
| 16 | 1.2.2.1 | Investigate Component | 14d | 2008-09-02 A | 2008-09-19 A | 14 | 100% | finish no earlier than 2008-09-19 | Hrishikesh Rajpathak | 112h | 112h |
| 17 | 1.2.2.2 | Developing Prototype | 2d | 2008-09-22 A | 2008-09-23 A | 16 | 100% |  | Hrishikesh Rajpathak | 16h | 16h |
| 18 | 1.2.2.3 | Design | 2d | 2008-09-24 A | 2008-09-25 A | 17 | 100% |  | Hrishikesh Rajpathak | 16h | 16h |
| 19 | 1.2.3 | **Implementation** | 3d | 2008-09-26 A | 2008-09-30 A | 15 | 100% |  |  | 24h | 24h |
| 20 | 1.2.3.1 | Separating out Implementation Deployment Unit | 2d | 2008-09-26 A | 2008-09-29 A |  | 100% |  | Hrishikesh Rajpathak | 16h | 16h |
| 21 | 1.2.3.2 | Changes needed in Deployment Process | 1d | 2008-09-30 A | 2008-09-30 A | 20 | 100% |  | Hrishikesh Rajpathak | 8h | 8h |
| 22 | 1.3 | **Representing grid user in caB2B** | 40d | 2008-08-07 A | 2008-10-02 A |  | 100% |  |  | 144h | 144h |
| 23 | 1.3.1 | Investigating APIs needed | 4d | 2008-08-07 A | 2008-08-12 A |  | 100% |  | Lalit Chand | 32h | 32h |
| 24 | 1.3.2 | Design to store user identity locally | 10d | 2008-09-15 A | 2008-09-26 A | 23 | 100% |  | Lalit Chand | 80h | 80h |
| 25 | 1.3.3 | Design review by external parties | 4d | 2008-09-29 A | 2008-10-02 A | 24 | 100% |  | Lalit Chand | 32h | 32h |

| ID | WBS | Task | Duration | Start | Finish | Predecessors | Complete | Constraint | Resources | Work | Actual work |
| --- | --- | --- | --- | --- | --- | --- | --- | --- | --- | --- | --- |
| 26 | 1.4 | **caB2B_Y3_002-User based experiments** | 12d | 2008-10-03 A | 2008-10-20 A |  | 100% |  |  | 96h | 96h |
| 27 | 1.4.1 | Requirement | 1d | 2008-10-03 A | 2008-10-03 A | 25 | 100% |  | Lalit Chand | 8h | 8h |
| 28 | 1.4.2 | Design | 2d | 2008-10-06 A | 2008-10-07 A | 27 | 100% |  | Lalit Chand | 16h | 16h |
| 29 | 1.4.3 | **Implementation** | 9d | 2008-10-08 A | 2008-10-20 A | 28 | 100% |  |  | 72h | 72h |
| 30 | 1.4.3.1 | Saving experiments on user basis | 3d | 2008-10-08 A | 2008-10-10 A |  | 100% |  | Lalit Chand | 24h | 24h |
| 31 | 1.4.3.2 | Changes needed at client-server interface to pass user info | 3d | 2008-10-13 A | 2008-10-15 A | 30 | 100% |  | Lalit Chand | 24h | 24h |
| 32 | 1.4.3.3 | Fetch and display experiments based on user | 3d | 2008-10-16 A | 2008-10-20 A | 31 | 100% |  | Lalit Chand | 24h | 24h |
| 33 | 1.5 | **caB2B_Y3_003-User based saved queries** | 11d | 2008-10-03 A | 2008-10-17 A | 22 | 100% |  |  | 88h | 88h |
| 34 | 1.5.1 | Requirement | 1d | 2008-10-03 A | 2008-10-03 A |  | 100% |  | Chetan Patil | 8h | 8h |
| 35 | 1.5.2 | Design | 4d | 2008-10-06 A | 2008-10-09 A | 34 | 100% |  | Chetan Patil | 32h | 32h |
| 36 | 1.5.3 | **Implementation** | 6d | 2008-10-10 A | 2008-10-17 A |  | 100% |  |  | 48h | 48h |
| 37 | 1.5.3.1 | Saving queries on user basis | 3d | 2008-10-10 A | 2008-10-14 A | 35 | 100% |  | Chetan Patil | 24h | 24h |
| 38 | 1.5.3.2 | Changes needed at client-server interface to pass user info | 3d | 2008-10-15 A | 2008-10-17 A | 37 | 100% |  | Chetan Patil | 24h | 24h |
| 39 | 1.6 | **caB2B_Y3_006-Home page experiments links functional + show all** | 12d | 2008-07-14 A | 2008-07-29 A |  | 100% |  |  | 96h | 96h |
| 40 | 1.6.1 | Requirement | 1d | 2008-07-14 A | 2008-07-14 A |  | 100% | start no earlier than 2008-07-14 | Deepak Shingan | 8h | 8h |
| 41 | 1.6.2 | UI Mockups | 1d | 2008-07-15 A | 2008-07-15 A | 40 | 100% |  | Deepak Shingan | 8h | 8h |
| 42 | 1.6.3 | Design | 1d | 2008-07-16 A | 2008-07-16 A | 41 | 100% |  | Deepak Shingan | 8h | 8h |
| 43 | 1.6.4 | **Implementation** | 9d | 2008-07-17 A | 2008-07-29 A |  | 100% |  |  | 72h | 72h |
| 44 | 1.6.4.1 | Showing recent experiments | 2d | 2008-07-17 A | 2008-07-18 A | 42 | 100% |  | Deepak Shingan | 16h | 16h |
| 45 | 1.6.4.2 | Making links in stack box funtional | 2d | 2008-07-21 A | 2008-07-22 A | 44 | 100% |  | Deepak Shingan | 16h | 16h |
| 46 | 1.6.4.3 | Show All to display all experiments on right side | 3d | 2008-07-23 A | 2008-07-25 A | 45 | 100% |  | Deepak Shingan | 24h | 24h |
| 47 | 1.6.4.4 | Click on any experiment from show all table to open experiment | 2d | 2008-07-28 A | 2008-07-29 A | 46 | 100% |  | Deepak Shingan | 16h | 16h |
| 48 | 1.7 | **caB2B_Y3_007-Home page category links functional + show all** | 12d | 2008-07-30 A | 2008-08-14 A |  | 100% |  |  | 96h | 96h |
| 49 | 1.7.1 | Requirement | 1d | 2008-07-30 A | 2008-07-30 A | 39 | 100% |  | Deepak Shingan | 8h | 8h |
| 50 | 1.7.2 | UI Mockups | 1d | 2008-07-31 A | 2008-07-31 A | 49 | 100% |  | Deepak Shingan | 8h | 8h |
| 51 | 1.7.3 | Design | 1d | 2008-08-01 A | 2008-08-01 A | 50 | 100% |  | Deepak Shingan | 8h | 8h |

| ID | WBS | Task | Duration | Start | Finish | Predecessors | Complete | Constraint | Resources | Work | Actual work |
| --- | --- | --- | --- | --- | --- | --- | --- | --- | --- | --- | --- |
| 52 | 1.7.4 | **Implementation** | 9d | 2008-08-04 A | 2008-08-14 A |  | 100% |  |  | 72h | 72h |
| 53 | 1.7.4.1 | Showing all categories | 2d | 2008-08-04 A | 2008-08-05 A | 51 | 100% |  | Deepak Shingan | 16h | 16h |
| 54 | 1.7.4.2 | Clicking on category in stack box to open add limit page | 2d | 2008-08-06 A | 2008-08-07 A | 53 | 100% |  | Deepak Shingan | 16h | 16h |
| 55 | 1.7.4.3 | Show All to display all categories on right side | 3d | 2008-08-08 A | 2008-08-12 A | 54 | 100% |  | Deepak Shingan | 24h | 24h |
| 56 | 1.7.4.4 | Click on any category from show all table to open it in add limit page | 2d | 2008-08-13 A | 2008-08-14 A | 55 | 100% |  | Deepak Shingan | 16h | 16h |
| 57 | 1.8 | **caB2B_Y3_008-Popular categories** | 24d | 2008-07-28 A | 2008-08-29 A |  | 100% |  |  | 184h | 184h |
| 58 | 1.8.1 | Requirement | 8d | 2008-07-28 A | 2008-08-06 A |  | 100% | start no earlier than 2008-07-28 | Hrishikesh Rajpathak | 64h | 64h |
| 59 | 1.8.2 | Design | 5d | 2008-08-07 A | 2008-08-13 A | 58 | 100% | finish no earlier than 2008-08-14 | Hrishikesh Rajpathak | 40h | 40h |
| 60 | 1.8.3 | **Implementation** | 10d | 2008-08-18 A | 2008-08-29 A |  | 100% |  |  | 80h | 80h |
| 61 | 1.8.3.1 | Calculating popularity | 3d | 2008-08-18 A | 2008-08-20 A | 59 | 100% |  | Hrishikesh Rajpathak | 24h | 24h |
| 62 | 1.8.3.2 | Storing and using popularity | 4d | 2008-08-21 A | 2008-08-26 A | 61 | 100% | finish no earlier than 2008-08-08 | Hrishikesh Rajpathak | 32h | 32h |
| 63 | 1.8.3.3 | Unit Testing | 3d | 2008-08-27 A | 2008-08-29 A | 62 | 100% |  | Hrishikesh Rajpathak | 24h | 24h |
| 64 | 1.9 | **caB2B_Y3_009-Fixing the current washU services for index service** | 21d | 2008-07-14 A | 2008-08-11 A |  | 100% |  |  | 168h | 168h |
| 65 | 1.9.1 | Learning service, discovery and metadata | 5d | 2008-07-14 A | 2008-07-18 A |  | 100% |  | Atul Jawale | 40h | 40h |
| 66 | 1.9.2 | Finding the cause | 5d | 2008-07-21 A | 2008-07-25 A | 65 | 100% |  | Atul Jawale | 40h | 40h |
| 67 | 1.9.3 | Investigating on fixes / solutions | 5d | 2008-07-28 A | 2008-08-01 A | 66 | 100% |  | Atul Jawale | 40h | 40h |
| 68 | 1.9.4 | Fixing Services | 6d | 2008-08-04 A | 2008-08-11 A | 67 | 100% |  | Atul Jawale | 48h | 48h |
| 69 | 1.10 | **caArray caTissue Integration Bug# 8780** | 6d | 2008-08-27 A | 2008-09-03 A |  | 100% |  |  | 48h | 48h |
| 70 | 1.10.1 | Investigation | 2d | 2008-08-27 A | 2008-08-28 A | 112 | 100% |  | Chetan Patil | 16h | 16h |
| 71 | 1.10.2 | Testing Patch | 2d | 2008-08-29 A | 2008-09-01 A | 70 | 100% |  | Chetan Patil | 16h | 16h |
| 72 | 1.10.3 | Pushing patch into WashU instance | 2d | 2008-09-02 A | 2008-09-03 A | 71 | 100% |  | Chetan Patil | 16h | 16h |
| 73 | 1.11 | **Exposing DCQL’s on the User Interface** | 25d | 2008-08-28 A | 2008-10-01 A |  | 100% |  |  | 184h | 184h |
| 74 | 1.11.1 | Requirement | 1d | 2008-08-28 A | 2008-08-28 A |  | 100% | finish no earlier than 2008-09-16 | Chetan Patil | 8h | 8h |
| 75 | 1.11.2 | Learning CQL | 5d | 2008-08-29 A | 2008-09-04 A | 74 | 100% |  | Lalit Chand | 40h | 40h |
| 76 | 1.11.3 | Understanding existing implementation | 4d | 2008-09-09 A | 2008-09-12 A | 75 | 100% |  | Chetan Patil | 32h | 32h |
| 77 | 1.11.4 | UI mockups | 1d | 2008-09-22 A | 2008-09-22 A |  | 100% | finish no earlier than 2008-09-22 | Atul Jawale | 8h | 8h |
| 78 | 1.11.5 | Design | 2d | 2008-09-23 A | 2008-09-24 A | 77 | 100% |  | Atul Jawale; Chetan Patil | 32h | 32h |

| ID | WBS | Task | Duration | Start | Finish | Predecessors | Complete | Constraint | Resources | Work | Actual work |
| --- | --- | --- | --- | --- | --- | --- | --- | --- | --- | --- | --- |
| 79 | 1.11.6 | **Implementation** | 5d | 2008-09-25 A | 2008-10-01 A |  | 100% |  |  | 64h | 64h |
| 80 | 1.11.6.1 | UI implementation | 4d | 2008-09-25 A | 2008-09-30 A | 78 | 100% | start no earlier than 2008-09-09 | Atul Jawale | 32h | 32h |
| 81 | 1.11.6.2 | Backend integration | 4d | 2008-09-26 A | 2008-10-01 A | 80 | 100% |  | Chetan Patil | 32h | 32h |
| 82 | 1.12 | **caB2B_Y3_005-User to override the URLs** | 16d | 2008-08-13 A | 2008-09-04 A |  | 100% |  |  | 128h | 128h |
| 83 | 1.12.1 | Requirement | 1d | 2008-08-13 A | 2008-08-13 A |  | 100% |  | Atul Jawale | 8h | 8h |
| 84 | 1.12.2 | UI mockups | 1d | 2008-08-14 A | 2008-08-14 A | 83 | 100% |  | Atul Jawale | 8h | 8h |
| 85 | 1.12.3 | Design | 1d | 2008-08-18 A | 2008-08-18 A | 84 | 100% |  | Atul Jawale | 8h | 8h |
| 86 | 1.12.4 | **Implementation** | 13d | 2008-08-19 A | 2008-09-04 A | 85 | 100% |  |  | 104h | 104h |
| 87 | 1.12.4.1 | UI implementation | 5d | 2008-08-19 A | 2008-08-25 A | 85 | 100% | finish no earlier than 2008-09-17 | Atul Jawale | 40h | 40h |
| 88 | 1.12.4.2 | Backend integration | 3d | 2008-08-26 A | 2008-08-28 A |  | 100% | start no earlier than 2008-09-18 | Atul Jawale | 24h | 24h |
| 89 | 1.12.4.3 | Unit testing | 2d | 2008-09-03 A | 2008-09-04 A | 90 | 100% |  | Atul Jawale | 16h | 16h |
| 90 | 1.12.4.4 | UE enhanements | 3d | 2008-08-29 A | 2008-09-02 A | 88 | 100% |  | Atul Jawale | 24h | 24h |
| 91 | 1.13 | **Showing results of a query grouped by the services** | 5d? | 2008-09-29 A | 2008-10-03 A |  | 100% |  |  | 24h | 24h |
| 92 | 1.13.1 | Requirement | 1d | 2008-09-29 A | 2008-09-29 A |  | 100% | start no earlier than 2008-09-29 | Chandrakant Talele | 8h | 8h |
| 93 | 1.13.2 | UI mockups | 1d | 2008-09-30 A | 2008-09-30 A | 92 | 100% |  | Chandrakant Talele | 8h | 8h |
| 94 | 1.13.3 | Design | 1d? | 2008-10-01 A | 2008-10-01 A | 93 | 100% |  | Chandrakant Talele | 8h | 8h |
| 95 | 1.13.4 | **Implementation** | 2d? | 2008-10-02 A | 2008-10-03 A |  | 100% |  |  |  |  |
| 96 | 1.13.4.1 | UI implementation | 1d? | 2008-10-02 A | 2008-10-02 A | 94 | 100% |  |  |  |  |
| 97 | 1.13.4.2 | Backend integration | 1d? | 2008-10-03 A | 2008-10-03 A | 96 | 100% |  |  |  |  |
| 98 | 1.14 | **Shipping of metadata along with installer** | 6d | 2008-09-29 A | 2008-10-06 A |  | 100% |  |  | 48h | 48h |
| 99 | 1.14.1 | Changes in installation script | 1d | 2008-09-29 A | 2008-09-29 A |  | 100% | start no earlier than 2008-09-29 | Chandrakant Talele | 8h | 8h |
| 100 | 1.14.2 | updating installation manuals | 1d | 2008-09-30 A | 2008-09-30 A | 99 | 100% |  | Chandrakant Talele | 8h | 8h |
| 101 | 1.14.3 | Write ant target | 1d | 2008-10-01 A | 2008-10-01 A | 100 | 100% |  | Hrishikesh Rajpathak | 8h | 8h |
| 102 | 1.14.4 | Update installation guide, update caB2B website | 3d | 2008-10-02 A | 2008-10-06 A | 101 | 100% | finish no earlier than 2008-10-06 | Hrishikesh Rajpathak | 24h | 24h |
| 103 | 1.15 | Knowledge Transfer from Deepak | 11d | 2008-09-05 A | 2008-09-19 A | 102 | 100% | start no earlier than 2008-09-05 | Atul Jawale; Deepak Shingan | 176h | 176h |

Notes:
- 87: Requirement changed by Mukesh on 10th sep(on weekly status call)

| ID | WBS | Task | Duration | Start | Finish | Predecessors | Complete | Constraint | Resources | Work | Actual work |
| --- | --- | --- | --- | --- | --- | --- | --- | --- | --- | --- | --- |
| 104 | 1.16 | **Service url at step 3 of search data wizard** | 8d | 2008-09-17 A | 2008-09-26 A |  | 100% |  |  | 64h | 64h |
| 105 | 1.16.1 | Service URL analysis | 2d | 2008-09-17 A | 2008-09-18 A |  | 100% | start no earlier than 2008-09-17 | Atul Jawale | 16h | 16h |
| 106 | 1.16.2 | Service URL UI updation | 2d | 2008-09-19 A | 2008-09-22 A | 105 | 100% |  | Atul Jawale | 16h | 16h |
| 107 | 1.16.3 | Service URL backend change and integration | 4d | 2008-09-23 A | 2008-09-26 A | 106 | 100% |  | Atul Jawale | 32h | 32h |
| 108 | 1.17 | **Bugs Fixing** | 67d | 2008-07-31 A | 2008-11-04 A |  | 100% |  |  | 96h | 96h |
| 109 | 1.17.1 | Bug# 8070 | 2d | 2008-07-31 A | 2008-08-01 A |  | 100% | start no earlier than 2008-08-04 | Chetan Patil | 16h | 16h |
| 110 | 1.17.2 | caTissue core service instance | 1d | 2008-08-12 A | 2008-08-12 A | 68 | 100% | start no earlier than 2008-08-08 | Atul Jawale | 8h | 8h |
| 111 | 1.17.3 | Bug 9090 & 9138 fix | 2d | 2008-08-21 A | 2008-08-22 A | 8 | 100% |  | Chetan Patil | 16h | 16h |
| 112 | 1.17.4 | Bug 9221 fix | 2d | 2008-08-25 A | 2008-08-26 A | 111 | 100% |  | Chetan Patil | 16h | 16h |
| 113 | 1.17.5 | Bug # 8911 | 1d | 2008-09-04 A | 2008-09-04 A | 72 | 100% |  | Chetan Patil | 8h | 8h |
| 114 | 1.17.6 | Bug # 8814 | 1d | 2008-09-05 A | 2008-09-05 A | 113 | 100% |  | Chetan Patil | 8h | 8h |
| 115 | 1.17.7 | Bug # 8839 | 1d | 2008-09-08 A | 2008-09-08 A | 114 | 100% |  | Chetan Patil | 8h | 8h |
| 116 | 1.17.8 | Bug # 9604 | 2d | 2008-11-03 A | 2008-11-04 A |  | 100% | start no earlier than 2008-11-03 | Guarav | 16h | 16h |
| 117 | 1.18 | **QA cycle-Internal release 1** | 15d | 2008-10-01 A | 2008-10-21 A | 13, 26, 33, 39, 48, 57, 64, 69, 73, 108, 82 | 100% |  | Madhumita | 128h | 128h |
| 118 | 1.18.1 | Test cases writing | 3d | 2008-10-01 A | 2008-10-03 A |  | 100% | finish no earlier than 2008-10-03 |  |  |  |
| 119 | 1.18.2 | Test case execution | 3d | 2008-10-07 A | 2008-10-09 A | 118 | 100% |  |  |  |  |
| 120 | 1.18.3 | Bug verification | 1d | 2008-10-21 A | 2008-10-21 A | 119 | 100% |  | Hrishikesh Rajpathak | 8h | 8h |
| 121 | 1.19 | **Documents** | 38d | 2008-09-08 A | 2008-10-30 A |  | 100% |  |  |  |  |
| 122 | 1.19.1 | Requirements | 3d | 2008-10-06 A | 2008-10-08 A |  | 100% | start no earlier than 2008-10-06 |  |  |  |
| 123 | 1.19.2 | cab2b design document | 12d | 2008-10-09 A | 2008-10-24 A | 122 | 100% | finish no earlier than 2008-10-24 |  |  |  |
| 124 | 1.19.3 | caB2B user manual | 5d | 2008-10-16 A | 2008-10-30 A | 123 | 100% |  |  |  |  |
| 125 | 1.19.4 | Use cases writing | 6d | 2008-09-08 A | 2008-09-15 A |  | 100% | start no earlier than 2008-09-08 |  |  |  |
| 126 | 1.20 | Internal Release Activity | 2d | 2008-10-23 A | 2008-10-24 A | 117, 124 | 100% | finish no earlier than 2008-10-24 | Lalit Chand | 16h | 16h |
| 127 | 1.21 | Final Release Activity | 5d | 2008-12-01 A | 2008-12-05 A |  | 100% | finish no earlier than 2008-12-05 | Lalit Chand | 40h | 40h |
| 128 | 1.22 | Bug fixing for Final release | 17d | 2008-11-03 A | 2008-11-25 A |  | 100% | finish no earlier than 2008-11-25 |  |  |  |
| 129 | 1.23 | Webstart issue | 4d? | 2008-11-20 A | 2008-11-25 A |  | 100% | finish no earlier than 2008-11-25 |  |  |  |
| 130 | 1.24 | Performance Improvement for getting service instances | 4d | 2008-11-20 A | 2008-11-25 A |  | 100% | finish no earlier than 2008-11-25 |  |  |  |
| 131 | 1.25 | Reducing jars from client | 3d | 2008-11-20 A | 2008-11-24 A |  | 100% | finish no earlier than 2008-11-24 |  |  |  |
| 132 | 1.26 | Regression Cycle | 2d | 2008-11-27 A | 2008-11-28 A | 131 | 100% | finish no earlier than 2008-11-28 |  |  |  |
| 133 | 1.27 | Deployment | 1d | 2008-12-01 A | 2008-12-01 A |  | 100% | start no earlier than 2008-12-01 |  |  |  |

| ID | WBS | Task | Duration | Start | Finish | Predecessors | Total slack | Free slack | Constraint |
| --- | --- | --- | --- | --- | --- | --- | --- | --- | --- |
| 134 | 2 | **Year 3 Release2** | 113d? | 2008-07-14 | 2008-12-19 |  | 0d |  |  |
| 135 | 2.1 | **caB2B_Y3_015-Support for getting probe data from caArray. For CEL files no need to bring data back to cab2b server, just get the URL and send it to analytical service** | 10d? | 2008-12-08 | 2008-12-19 |  | 0d |  |  |
| 136 | 2.1.1 | Requirement | 1d? | 2008-12-08 | 2008-12-08 |  | 0d |  | start no earlier than 2008-12-08 |
| 137 | 2.1.2 | Investigation | 1d? | 2008-12-09 | 2008-12-09 | 136 | 0d |  |  |
| 138 | 2.1.3 | Prototype to get probe data from caArray | 1d? | 2008-12-10 | 2008-12-10 | 137 | 0d |  |  |
| 139 | 2.1.4 | Understanding of viewer | 1d? | 2008-12-11 | 2008-12-11 | 138 | 0d |  |  |
| 140 | 2.1.5 | **Design** | 3d? | 2008-12-12 | 2008-12-16 |  | 0d |  |  |
| 141 | 2.1.5.1 | Changes in current backend design to save retreived probe data | 1d? | 2008-12-12 | 2008-12-12 | 139 | 0d |  |  |
| 142 | 2.1.5.2 | Changes in spreadsheet to display probeset data | 1d? | 2008-12-15 | 2008-12-15 | 141 | 0d |  |  |
| 143 | 2.1.5.3 | Changes in design of heatmap | 1d? | 2008-12-16 | 2008-12-16 | 142 | 0d |  |  |
| 144 | 2.1.6 | **Implementation** | 3d? | 2008-12-17 | 2008-12-19 |  | 0d |  |  |
| 145 | 2.1.6.1 | Backend changes | 1d? | 2008-12-17 | 2008-12-17 | 143 | 0d |  |  |
| 146 | 2.1.6.2 | Modifications in spread sheet | 1d? | 2008-12-18 | 2008-12-18 | 145 | 0d |  |  |
| 147 | 2.1.6.3 | Modifications in heatmap model | 1d? | 2008-12-19 | 2008-12-19 | 146 | 0d |  |  |
| 148 | 2.2 | **caB2B_Y3_013-intermodel joins for a group like washU, NCICB , Intermodel joins with pair of service instances** | 4d? | 2008-07-14 | 2008-07-17 |  | 109d |  |  |
| 149 | 2.2.1 | Requirement | 1d? | 2008-07-14 | 2008-07-14 |  | 112d |  |  |
| 150 | 2.2.2 | **Design** | 2d? | 2008-07-14 | 2008-07-15 |  | 109d |  |  |
| 151 | 2.2.2.1 | Changes in current service url design | 1d? | 2008-07-14 | 2008-07-14 |  | 109d | 0d |  |
| 152 | 2.2.2.2 | Changes in query building | 1d? | 2008-07-15 | 2008-07-15 | 151 | 109d | 0d |  |
| 153 | 2.2.3 | **Implementation** | 2d? | 2008-07-16 | 2008-07-17 |  | 109d |  |  |
| 154 | 2.2.3.1 | CRUD of service url group | 1d? | 2008-07-16 | 2008-07-16 | 152 | 109d | 0d |  |
| 155 | 2.2.3.2 | Changes in query building | 1d? | 2008-07-17 | 2008-07-17 | 154 | 109d |  |  |
| 156 | 2.3 | Any new feature request from user | 1d? | 2008-07-14 | 2008-07-14 |  | 112d |  |  |
| 157 | 2.4 | **caB2B_Y3_004-Asynchronous execution of queries** | 7d? | 2008-07-14 | 2008-07-22 |  | 106d |  |  |
| 158 | 2.4.1 | Requirement | 1d? | 2008-07-14 | 2008-07-14 |  | 106d | 0d |  |
| 159 | 2.4.2 | Prototype of scheduling component | 1d? | 2008-07-15 | 2008-07-15 | 158 | 106d | 0d |  |
| 160 | 2.4.3 | Design | 1d? | 2008-07-16 | 2008-07-16 | 159 | 106d | 0d |  |

| ID | WBS | Task | Duration | Start | Finish | Predecessors | Complete | Remaining | Total slack | Free slack | Work | Actual work |
| --- | --- | --- | --- | --- | --- | --- | --- | --- | --- | --- | --- | --- |
| 161 | 2.4.4 | **Implementation** | 4d? | 2008-07-17 | 2008-07-22 |  |  |  | 106d |  |  |  |
| 162 | 2.4.4.1 | Represent schedule | 1d? | 2008-07-17 | 2008-07-17 | 160 |  |  | 106d | 0d |  |  |
| 163 | 2.4.4.2 | Storing schedule and firing jobs | 1d? | 2008-07-18 | 2008-07-18 | 162 |  |  | 106d | 0d |  |  |
| 164 | 2.4.4.3 | Implementing job for query execution | 1d? | 2008-07-21 | 2008-07-21 | 163 |  |  | 106d | 0d |  |  |
| 165 | 2.4.4.4 | Inbox like component to view execution results | 1d? | 2008-07-22 | 2008-07-22 | 164 |  |  | 106d |  |  |  |
| 166 | 2.5 | **caB2B_Y3_012-Asynchronous of save data list** | 3d? | 2008-07-14 | 2008-07-16 |  |  |  | 110d |  |  |  |
| 167 | 2.5.1 | Requirement | 1d? | 2008-07-14 | 2008-07-14 |  |  |  | 110d | 0d |  |  |
| 168 | 2.5.2 | Design | 1d? | 2008-07-15 | 2008-07-15 | 167 |  |  | 110d | 0d |  |  |
| 169 | 2.5.3 | **Implementation** | 1d? | 2008-07-16 | 2008-07-16 |  |  |  | 110d |  |  |  |
| 170 | 2.5.3.1 | Behind the scene save of data list | 1d? | 2008-07-16 | 2008-07-16 | 168 |  |  | 110d |  |  |  |
| 171 | 2.6 | **caB2B_Y3_014-Experiments with multiple datalists, edit expr to add data list with way to re-query (more likely)** | 6d? | 2008-07-14 | 2008-07-21 |  |  |  | 107d |  |  |  |
| 172 | 2.6.1 | Requirement | 1d? | 2008-07-14 | 2008-07-14 |  |  |  | 107d | 0d |  |  |
| 173 | 2.6.2 | UI Mockups | 1d? | 2008-07-15 | 2008-07-15 | 172 |  |  | 107d | 0d |  |  |
| 174 | 2.6.3 | Design | 1d? | 2008-07-16 | 2008-07-16 | 173 |  |  | 107d | 0d |  |  |
| 175 | 2.6.4 | **Implementation** | 3d? | 2008-07-17 | 2008-07-21 |  |  |  | 107d |  |  |  |
| 176 | 2.6.4.1 | UI for data list viewer | 1d? | 2008-07-17 | 2008-07-17 | 174 |  |  | 107d | 0d |  |  |
| 177 | 2.6.4.2 | Changes needed in Experiment module | 1d? | 2008-07-18 | 2008-07-18 | 176 |  |  | 107d | 0d |  |  |
| 178 | 2.6.4.3 | backend support for multiple data list | 1d? | 2008-07-21 | 2008-07-21 | 177 |  |  | 107d |  |  |  |
| 179 | 2.7 | **Securing admin(moving Admin module in https)** | 1d? | 2008-07-14 | 2008-07-14 |  |  |  | 112d |  |  |  |
| 180 | 2.7.1 | Changes in the current deployment process | 1d? | 2008-07-14 | 2008-07-14 |  |  |  | 112d |  |  |  |
| 181 | 2.7.2 | Verifications | 1d? | 2008-07-14 | 2008-07-14 |  |  |  | 112d |  |  |  |
| 182 | 3 | **Year 3 Release3** | 43d? | 2008-07-14 A | 2008-09-11 |  | 12% | 37.97d? | 70d |  | 160h | 160h |
| 183 | 3.1 | **caB2B_Y3_010-Support WS enumerations data services** | 1d? | 2008-07-14 | 2008-07-14 |  |  |  | 112d |  |  |  |
| 184 | 3.1.1 | Requirement | 1d? | 2008-07-14 | 2008-07-14 |  |  |  | 112d |  |  |  |
| 185 | 3.1.2 | Investigation | 1d? | 2008-07-14 | 2008-07-14 |  |  |  | 112d |  |  |  |

| ID | WBS | Task | Duration | Start | Finish | Total slack |
| --- | --- | --- | --- | --- | --- | --- |
| 186 | 3.1.3 | **Investigate Component** | 1d? | 2008-07-14 | 2008-07-14 | 112d |
| 187 | 3.1.3.1 | Developing Prototype | 1d? | 2008-07-14 | 2008-07-14 | 112d |
| 188 | 3.1.3.2 | **Design** | 1d? | 2008-07-14 | 2008-07-14 | 112d |
| 189 | 3.1.3.2.1 | Implementation | 1d? | 2008-07-14 | 2008-07-14 | 112d |
| 190 | 3.1.3.2.2 | Separating out Implementation Deployment Unit | 1d? | 2008-07-14 | 2008-07-14 | 112d |
| 191 | 3.1.3.3 | Changes needed in Deployment Process | 1d? | 2008-07-14 | 2008-07-14 | 112d |
| 192 | 3.2 | **caB2B_Y3_019-Intermodel joins with multiple attributes** | 1d? | 2008-07-14 | 2008-07-14 | 112d |
| 193 | 3.2.1 | Requirement | 1d? | 2008-07-14 | 2008-07-14 | 112d |
| 194 | 3.2.2 | **Investigation** | 1d? | 2008-07-14 | 2008-07-14 | 112d |
| 195 | 3.2.2.1 | Investigate Component | 1d? | 2008-07-14 | 2008-07-14 | 112d |
| 196 | 3.2.2.2 | Developing Prototype | 1d? | 2008-07-14 | 2008-07-14 | 112d |
| 197 | 3.2.3 | Design | 1d? | 2008-07-14 | 2008-07-14 | 112d |
| 198 | 3.2.4 | **Implementation** | 1d? | 2008-07-14 | 2008-07-14 | 112d |
| 199 | 3.2.4.1 | Separating out Implementation Deployment Unit | 1d? | 2008-07-14 | 2008-07-14 | 112d |
| 200 | 3.2.4.2 | Changes needed in Deployment Process | 1d? | 2008-07-14 | 2008-07-14 | 112d |
| 201 | 3.3 | **Advanced result view** | 1d? | 2008-07-14 | 2008-07-14 | 112d |
| 202 | 3.3.1 | Understanding requirement | 1d? | 2008-07-14 | 2008-07-14 | 112d |
| 203 | 3.3.2 | UI mock ups | 1d? | 2008-07-14 | 2008-07-14 | 112d |
| 204 | 3.3.3 | Design | 1d? | 2008-07-14 | 2008-07-14 | 112d |
| 205 | 3.3.4 | **UI implementation** | 1d? | 2008-07-14 | 2008-07-14 | 112d |
| 206 | 3.3.4.1 | Changes on define result view(step 3 of wizard) | 1d? | 2008-07-14 | 2008-07-14 | 112d |
| 207 | 3.3.4.2 | Changes in the advanced view result | 1d? | 2008-07-14 | 2008-07-14 | 112d |
| 208 | 3.3.5 | **Backend implementation** | 1d? | 2008-07-14 | 2008-07-14 | 112d |
| 209 | 3.3.5.1 | query changes to get all the objects asked in the result view | 1d? | 2008-07-14 | 2008-07-14 | 112d |
| 210 | 3.3.5.2 | changes in datalist | 1d? | 2008-07-14 | 2008-07-14 | 112d |
| 211 | 3.4 | Metadata that has been searched for should be highlighted in the Add Limit panel. | 1d? | 2008-07-14 | 2008-07-14 | 112d |
| 212 | 3.5 | Expansion of categories to create category across different applications | 1d? | 2008-07-14 | 2008-07-14 | 112d |

Notes:
- 201: Use case: User has created a query and now wants to add a new class without any limits, just to fetch this additional associated information. / For example, while finding the GBM specimens user wants to know under what collection protocol the samples were collected. / The result view should also be a more user friendly view where classes are represented in a tree like format.

| ID | WBS | Task | Duration | Start | Finish | Predecessors | Complete | Remaining | Total slack | Free slack | Resources | Work | Actual work |
| --- | --- | --- | --- | --- | --- | --- | --- | --- | --- | --- | --- | --- | --- |
| 213 | 3.6 | **caB2B_Y3_018-Returning result of a federated query even if only one of the instances is failed** | 1d? | 2008-07-14 | 2008-07-14 |  |  |  | 112d |  |  |  |  |
| 214 | 3.6.1 | Requirement | 1d? | 2008-07-14 | 2008-07-14 |  |  |  | 112d |  |  |  |  |
| 215 | 3.6.2 | Investigation | 1d? | 2008-07-14 | 2008-07-14 |  |  |  | 112d |  |  |  |  |
| 216 | 3.6.3 | Investigate Component | 1d? | 2008-07-14 | 2008-07-14 |  |  |  | 112d |  |  |  |  |
| 217 | 3.6.4 | **Developing Prototype** | 1d? | 2008-07-14 | 2008-07-14 |  |  |  | 112d |  |  |  |  |
| 218 | 3.6.4.1 | Design | 1d? | 2008-07-14 | 2008-07-14 |  |  |  | 112d |  |  |  |  |
| 219 | 3.6.5 | **Implementation** | 1d? | 2008-07-14 | 2008-07-14 |  |  |  | 112d |  |  |  |  |
| 220 | 3.6.5.1 | Separating out Implementation Deployment Unit | 1d? | 2008-07-14 | 2008-07-14 |  |  |  | 112d |  |  |  |  |
| 221 | 3.6.5.2 | Changes needed in Deployment Process | 1d? | 2008-07-14 | 2008-07-14 |  |  |  | 112d |  |  |  |  |
| 222 | 3.7 | **caB2B_Y3_016-Support basic analytical services (support for ICR services, if needed, do customizations)** | 43d? | 2008-07-14 A | 2008-09-11 |  | 6% | 40.39d? | 70d |  |  | 32h | 32h |
| 223 | 3.7.1 | **Requirement** | 43d? | 2008-07-14 A | 2008-09-11 |  | 6% | 40.39d? | 70d |  |  | 32h | 32h |
| 224 | 3.7.1.1 | **Investigation** | 22d? | 2008-07-14 A | 2008-08-12 |  | 67% | 7.33d? | 91d |  |  | 32h | 32h |
| 225 | 3.7.1.1.1 | Investigating APIs needed | 4d | 2008-08-07 A | 2008-08-12 A |  | 100% |  |  |  | Lalit Chand | 32h | 32h |
| 226 | 3.7.1.1.2 | Design to store user identity locally | 1d? | 2008-07-14 | 2008-07-14 |  |  |  | 112d |  |  |  |  |
| 227 | 3.7.1.1.3 | Design review by external parties | 1d? | 2008-07-14 | 2008-07-14 |  |  |  | 112d |  |  |  |  |
| 228 | 3.7.1.2 | Investigate Component | 1d? | 2008-07-14 | 2008-07-14 |  |  |  | 112d |  |  |  |  |
| 229 | 3.7.1.3 | Developing Prototype | 37d | 2008-07-14 | 2008-09-03 |  |  |  | 70d | 0d |  |  |  |
| 230 | 3.7.1.4 | **Schedular** | 7d | 2008-07-14 | 2008-07-22 |  |  |  | 97d |  |  |  |  |
| 231 | 3.7.1.4.1 | Investigate Component | 2d | 2008-07-14 | 2008-07-15 |  |  |  | 97d | 0d |  |  |  |
| 232 | 3.7.1.4.2 | Developing Prototype | 5d | 2008-07-16 | 2008-07-22 | 231 |  |  | 97d | 0d |  |  |  |
| 233 | 3.7.1.5 | **Notification** | 9d | 2008-07-23 | 2008-08-04 |  |  |  | 97d |  |  |  |  |
| 234 | 3.7.1.5.1 | UI mockup | 1d | 2008-07-23 | 2008-07-23 | 232 |  |  | 97d | 0d |  |  |  |
| 235 | 3.7.1.5.2 | UI implementation | 3d | 2008-07-24 | 2008-07-28 | 234 |  |  | 97d | 0d |  |  |  |
| 236 | 3.7.1.5.3 | Backend Implementation | 5d | 2008-07-29 | 2008-08-04 | 235 |  |  | 97d |  |  |  |  |

| ID | WBS | Task | Duration | Start | Finish | Predecessors | Complete | Remaining | Total slack | Free slack | Resources | Work | Actual work |
| --- | --- | --- | --- | --- | --- | --- | --- | --- | --- | --- | --- | --- | --- |
| 237 | 3.7.1.6 | **Design** | 3d? | 2008-09-04 | 2008-09-08 | 229 |  |  | 70d |  |  |  |  |
| 238 | 3.7.1.6.1 | Implementation | 1d? | 2008-09-04 | 2008-09-04 |  |  |  | 70d | 0d |  |  |  |
| 239 | 3.7.1.6.2 | Separating out Implementation Deployment Unit | 1d? | 2008-09-05 | 2008-09-05 | 238 |  |  | 70d | 0d |  |  |  |
| 240 | 3.7.1.6.3 | Changes needed in Deployment Process | 1d? | 2008-09-08 | 2008-09-08 | 239 |  |  | 70d | 0d |  |  |  |
| 241 | 3.7.1.7 | **Representing grid user in caB2B** | 3d? | 2008-09-09 | 2008-09-11 | 240 |  |  | 70d |  |  |  |  |
| 242 | 3.7.1.7.1 | Expansion of categories | 1d? | 2008-09-09 | 2008-09-09 |  |  |  | 70d | 0d |  |  |  |
| 243 | 3.7.1.7.2 | Schedular component + notification functionality | 1d? | 2008-09-10 | 2008-09-10 | 242 |  |  | 70d | 0d |  |  |  |
| 244 | 3.8 | **caB2B_Y3_020Technology Stack Migration** | 18d | 2008-07-14 A | 2008-08-06 |  | 40% | 10.8d | 95d |  |  | 128h | 128h |
| 245 | 3.8.1 | **New DE release** | 10d | 2008-07-14 | 2008-07-25 |  |  |  | 103d |  |  |  |  |
| 246 | 3.8.1.1 | Understand new design and identify changes | 2d | 2008-07-14 | 2008-07-15 |  |  |  | 111d |  |  |  |  |
| 247 | 3.8.1.2 | Changs in cab2B and Admin | 10d | 2008-07-14 | 2008-07-25 |  |  |  | 103d |  |  |  |  |
| 248 | 3.8.1.3 | Verification | 4d | 2008-07-14 | 2008-07-17 |  |  |  | 109d |  |  |  |  |
| 249 | 3.8.2 | **Java 1.5** | 5d | 2008-07-14 | 2008-07-18 |  |  |  | 108d |  |  |  |  |
| 250 | 3.8.2.1 | Identify changes for java 1.5 | 5d | 2008-07-14 | 2008-07-18 |  |  |  | 108d |  |  |  |  |
| 251 | 3.8.2.2 | Solution for client side java 6 components | 3d | 2008-07-14 | 2008-07-16 |  |  |  | 110d |  |  |  |  |
| 252 | 3.8.3 | **Migrate to EJB 3.0** | 16d | 2008-07-16 A | 2008-08-06 A |  | 100% |  |  |  |  | 128h | 128h |
| 253 | 3.8.3.1 | Understanding EJB 3.0 | 5d | 2008-07-16 A | 2008-07-22 A |  | 100% |  |  |  | Lalit Chand | 40h | 40h |
| 254 | 3.8.3.2 | Changes in existing codebase | 3d | 2008-07-23 A | 2008-07-25 A | 253 | 100% |  |  |  | Lalit Chand | 24h | 24h |
| 255 | 3.8.3.3 | Changes in deployment process | 1d | 2008-07-28 A | 2008-07-28 A | 254 | 100% |  |  |  | Lalit Chand | 8h | 8h |
| 256 | 3.8.3.4 | Testing | 4d | 2008-07-29 A | 2008-08-01 A | 255 | 100% |  |  |  | Lalit Chand | 32h | 32h |
| 257 | 3.8.3.5 | Verification | 3d | 2008-08-04 A | 2008-08-06 A | 256 | 100% |  |  |  | Lalit Chand | 24h | 24h |
| 258 | 3.9 | **caB2B_Y3_017-Viewers for supported analytical services** | 1d? | 2008-07-14 | 2008-07-14 |  |  |  | 112d |  |  |  |  |
| 259 | 3.9.1 | Requirement | 1d? | 2008-07-14 | 2008-07-14 |  |  |  | 112d |  |  |  |  |
| 260 | 3.9.2 | **Investigation** | 1d? | 2008-07-14 | 2008-07-14 |  |  |  | 112d |  |  |  |  |
| 261 | 3.9.2.1 | Investigate Component | 1d? | 2008-07-14 | 2008-07-14 |  |  |  | 112d |  |  |  |  |
| 262 | 3.9.2.2 | Developing Prototype | 1d? | 2008-07-14 | 2008-07-14 |  |  |  | 112d |  |  |  |  |
| 263 | 3.9.2.3 | Design | 1d? | 2008-07-14 | 2008-07-14 |  |  |  | 112d |  |  |  |  |

| ID | WBS | Task | Duration | Start | Finish | Total slack |
| --- | --- | --- | --- | --- | --- | --- |
| 264 | 3.9.3 | **Implementation** | 1d? | 2008-07-14 | 2008-07-14 | 112d |
| 265 | 3.9.3.1 | Separating out Implementation Deployment Unit | 1d? | 2008-07-14 | 2008-07-14 | 112d |
| 266 | 3.9.3.2 | Changes needed in Deployment Process | 1d? | 2008-07-14 | 2008-07-14 | 112d |
| 267 | 3.10 | **QA cycle** | 1d? | 2008-07-14 | 2008-07-14 | 112d |
| 268 | 3.10.1 | Writing testcases for new functionalities | 1d? | 2008-07-14 | 2008-07-14 | 112d |
| 269 | 3.10.2 | Build 1 for QA | 1d? | 2008-07-14 | 2008-07-14 | 112d |
| 270 | 3.10.3 | Testing Build 1 | 1d? | 2008-07-14 | 2008-07-14 | 112d |
| 271 | 3.10.4 | Fix bugs reported in Build 1 | 1d? | 2008-07-14 | 2008-07-14 | 112d |
| 272 | 3.10.5 | Demo to washU users | 1d? | 2008-07-14 | 2008-07-14 | 112d |
| 273 | 3.10.6 | Build 2 for QA | 1d? | 2008-07-14 | 2008-07-14 | 112d |
| 274 | 3.10.7 | Testing of Build 2 (by QA + washU users) | 1d? | 2008-07-14 | 2008-07-14 | 112d |
| 275 | 3.10.8 | Regression Testing | 1d? | 2008-07-14 | 2008-07-14 | 112d |
| 276 | 3.10.9 | Fix bugs reported in (Build 2 + regression testing) | 1d? | 2008-07-14 | 2008-07-14 | 112d |
| 277 | 3.11 | **Release Candidate 1** | 1d? | 2008-07-14 | 2008-07-14 | 112d |
| 278 | 3.11.1 | Release to QA + washU users for accepatance | 1d? | 2008-07-14 | 2008-07-14 | 112d |
| 279 | 3.11.2 | Verification of fixed bugs | 1d? | 2008-07-14 | 2008-07-14 | 112d |
| 280 | 3.11.3 | UAT by QA + washU users | 1d? | 2008-07-14 | 2008-07-14 | 112d |
| 281 | 3.11.4 | UAT bug fixing | 1d? | 2008-07-14 | 2008-07-14 | 112d |
| 282 | 3.12 | **Release activities** | 1d? | 2008-07-14 | 2008-07-14 | 112d |
| 283 | 3.12.1 | Updating washU servers | 1d? | 2008-07-14 | 2008-07-14 | 112d |
| 284 | 3.12.2 | Updating G-forge | 1d? | 2008-07-14 | 2008-07-14 | 112d |
| 285 | 3.12.3 | Updating website (cab2b.wustl.edu) | 1d? | 2008-07-14 | 2008-07-14 | 112d |
| 286 | 3.12.4 | Updating caBIG Tools Page | 1d? | 2008-07-14 | 2008-07-14 | 112d |
| 287 | 3.13 | **Documentation** | 1d? | 2008-07-14 | 2008-07-14 | 112d |
| 288 | 3.13.1 | Admin end user manual | 1d? | 2008-07-14 | 2008-07-14 | 112d |
| 289 | 3.13.2 | Admin design document | 1d? | 2008-07-14 | 2008-07-14 | 112d |
| 290 | 3.13.3 | Update design document | 1d? | 2008-07-14 | 2008-07-14 | 112d |
| 291 | 3.13.4 | Update end user manual update | 1d? | 2008-07-14 | 2008-07-14 | 112d |
| 292 | 3.13.5 | Documentation Review | 1d? | 2008-07-14 | 2008-07-14 | 112d |
| 293 | 3.13.6 | Review by NCICB Leads | 1d? | 2008-07-14 | 2008-07-14 | 112d |
| 294 | 3.13.7 | D&T Review | 1d? | 2008-07-14 | 2008-07-14 | 112d |
| 295 | 3.14 | Final Documentation | 1d? | 2008-07-14 | 2008-07-14 | 112d |
