# Milestone3 Project plan

Schedule from MS Project, 2008-02-25 to 2008-07-22, A marks actual dates.
persistent systems pvt ltd

## Calendars

- Standard: Mon-Fri 08:00-12:00, 13:00-17:00; Sat-Sun off. Exceptions (off unless hours are given): 2008-05-01 to 2008-05-02 (Holiday).

## Resources

| Resource |
| --- |
| Chetan |
| Atul |
| Deepak |
| Madhumita |
| Hrishikesh |
| Lalit |
| Srinath |
| washU |
| NCICB |
| Chandrakant |

## Schedule

| ID | WBS | Task | Duration | Start | Finish | Predecessors | Complete | Remaining | Total slack | Free slack | Constraint | Resources | Work | Actual work |
| --- | --- | --- | --- | --- | --- | --- | --- | --- | --- | --- | --- | --- | --- | --- |
| 1 | 1 | **Milestone 3** | 105d | 2008-02-25 A | 2008-07-22 |  | 47% | 55.38d | 0d |  |  |  | 2903h | 1279.8h |
| 2 | 1.1 | **Path Curation** | 52d | 2008-03-03 A | 2008-05-15 |  | 81% | 9.7d | 4d |  |  |  | 592h | 481.6h |
| 3 | 1.1.1 | Requirements | 8d | 2008-03-03 A | 2008-03-12 A |  | 100% |  |  |  | start no earlier than 2008-03-03 | Atul | 64h | 64h |
| 4 | 1.1.2 | **Investigation** | 22d | 2008-03-06 A | 2008-04-04 A |  | 100% |  |  |  |  |  | 96h | 96h |
| 5 | 1.1.2.1 | Understanding Flex | 7d | 2008-03-06 A | 2008-03-14 A | 3 | 100% |  |  |  |  | Lalit | 56h | 56h |
| 6 | 1.1.2.2 | Understanding existing Flex based DAG | 5d | 2008-03-31 A | 2008-04-04 A | 5 | 100% |  |  |  |  | Lalit | 40h | 40h |
| 7 | 1.1.3 | **Design** | 11d | 2008-03-14 A | 2008-03-28 A |  | 100% |  |  |  |  |  | 88h | 88h |
| 8 | 1.1.3.1 | Wireframe of UI | 1d | 2008-03-14 A | 2008-03-14 A | 3 | 100% |  |  |  | start no earlier than 2008-03-14 | Atul | 8h | 8h |
| 9 | 1.1.3.2 | Design model for DAG using Flex | 10d | 2008-03-17 A | 2008-03-28 A | 8 | 100% |  |  |  | finish no earlier than 2008-03-28 | Atul | 80h | 80h |
| 10 | 1.1.4 | **Implementation** | 32d | 2008-03-31 A | 2008-05-15 |  | 68% | 10.27d | 4d |  |  |  | 344h | 233.6h |
| 11 | 1.1.4.1 | Curated Path UI | 10d | 2008-03-31 A | 2008-04-11 A | 9 | 100% |  |  |  | finish no earlier than 2008-04-11 | Atul | 80h | 80h |
| 12 | 1.1.4.2 | Changes in category creation | 7d | 2008-04-11 A | 2008-04-21 A |  | 100% |  |  |  |  | Lalit | 56h | 56h |
| 13 | 1.1.4.3 | Implement datamodel for Curated Path UI | 12d | 2008-04-22 A | 2008-05-09 | 12 | 60% | 4.8d | 8d |  |  | Lalit | 96h | 57.6h |
| 14 | 1.1.4.4 | Save-read of curated Path | 5d | 2008-04-14 A | 2008-04-18 A | 11 | 100% |  |  |  | start no earlier than 2008-04-14 | Atul | 40h | 40h |
| 15 | 1.1.4.5 | Implement steps for intermodel joins | 5d | 2008-05-05 | 2008-05-09 |  |  |  | 4d | 0d | start no earlier than 2008-05-05 | Chetan | 40h |  |
| 16 | 1.1.4.6 | Curated path changes in caB2B client | 4d | 2008-05-12 | 2008-05-15 | 15 |  |  | 4d |  | start no earlier than 2008-05-12 | Chetan | 32h |  |
| 17 | 1.2 | **Online creation of categories** | 61d | 2008-02-25 A | 2008-05-21 |  | 57% | 26.43d | 1d | 0d |  |  | 240h | 136h |
| 18 | 1.2.1 | Requirement | 2d | 2008-02-25 A | 2008-02-26 A |  | 100% |  |  |  | start no earlier than 2008-02-25 | Chetan | 16h | 16h |
| 19 | 1.2.2 | **Investigation** | 15d | 2008-03-03 A | 2008-03-21 A | 18 | 100% |  |  |  |  |  | 120h | 120h |
| 20 | 1.2.2.1 | Investigate component | 7d | 2008-03-03 A | 2008-03-11 A | 18 | 100% |  |  |  | start no earlier than 2008-03-10 | Chetan | 56h | 56h |
| 21 | 1.2.2.2 | Developing prototype | 8d | 2008-03-12 A | 2008-03-21 A | 20 | 100% |  |  |  |  | Chetan | 64h | 64h |
| 22 | 1.2.3 | Design | 5d | 2008-05-05 | 2008-05-09 | 19 |  |  | 1d | 0d | start no earlier than 2008-05-05 | Chetan | 40h |  |
| 23 | 1.2.4 | **Implementation** | 8d | 2008-05-12 | 2008-05-21 | 22 |  |  | 1d |  |  |  | 64h |  |
| 24 | 1.2.4.1 | Separating out implementaion deployment unit | 3d | 2008-05-12 | 2008-05-14 | 22 |  |  | 1d | 0d |  | Chetan | 24h |  |
| 25 | 1.2.4.2 | Changes needed in deployment process | 5d | 2008-05-15 | 2008-05-21 | 24 |  |  | 1d |  |  | Chetan | 40h |  |

| ID | WBS | Task | Duration | Start | Finish | Predecessors | Complete | Remaining | Total slack | Free slack | Constraint | Resources | Work | Actual work |
| --- | --- | --- | --- | --- | --- | --- | --- | --- | --- | --- | --- | --- | --- | --- |
| 26 | 1.3 | **caArray 2.0 access** | 23d | 2008-03-31 A | 2008-04-30 A |  | 100% |  |  |  |  |  | 175h | 175h |
| 27 | 1.3.1 | Requirement | 2d | 2008-03-31 A | 2008-04-01 A |  | 100% |  |  |  | start no earlier than 2008-04-03 | Deepak | 16h | 16h |
| 28 | 1.3.2 | **Investigation** | 3d | 2008-04-02 A | 2008-04-04 A |  | 100% |  |  |  |  |  | 24h | 24h |
| 29 | 1.3.2.1 | Investigate caArray 2.0 data service | 3d | 2008-04-02 A | 2008-04-04 A |  | 100% |  |  |  |  | Deepak | 24h | 24h |
| 30 | 1.3.3 | **Design** | 5d | 2008-04-18 A | 2008-04-24 A |  | 100% |  |  |  |  |  | 40h | 40h |
| 31 | 1.3.3.1 | Changes in current caArray customizations | 5d | 2008-04-18 A | 2008-04-24 A |  | 100% |  |  |  | start no earlier than 2008-04-21 | Deepak | 40h | 40h |
| 32 | 1.3.4 | **Implementation** | 18d | 2008-04-07 A | 2008-04-30 A |  | 100% |  |  |  |  |  | 95h | 95h |
| 33 | 1.3.4.1 | Changes in pathbuilding API to take size | 3d | 2008-04-07 A | 2008-04-09 A |  | 100% |  |  |  |  | Deepak | 24h | 24h |
| 34 | 1.3.4.2 | Loading caArray model | 2d | 2008-04-10 A | 2008-04-11 A |  | 100% |  |  |  |  | Deepak | 16h | 16h |
| 35 | 1.3.4.3 | Verifying caArray queries | 5d | 2008-04-14 A | 2008-04-18 A |  | 100% |  |  |  |  | Deepak | 23h | 23h |
| 36 | 1.3.4.4 | Resolving caArray issues | 4d | 2008-04-25 A | 2008-04-30 A |  | 100% |  |  |  | start no earlier than 2008-04-29 | Deepak | 32h | 32h |
| 37 | 1.4 | **Query secure data services** | 46d | 2008-03-03 A | 2008-05-07 |  | 91% | 4.18d | 2d | 0d |  |  | 264h | 240h |
| 38 | 1.4.1 | Requirement | 3d | 2008-03-03 A | 2008-03-05 A |  | 100% |  |  |  | start no earlier than 2008-02-25 | Hrishikesh | 24h | 24h |
| 39 | 1.4.2 | **Investigation** | 10d | 2008-03-25 A | 2008-04-07 A |  | 100% |  |  |  |  |  | 80h | 80h |
| 40 | 1.4.2.1 | Finding out the needed APIs | 5d | 2008-03-25 A | 2008-03-31 A | 38 | 100% |  |  |  | start no earlier than 2008-02-28 | Hrishikesh | 40h | 40h |
| 41 | 1.4.2.2 | Prototype using grid security APis | 5d | 2008-04-01 A | 2008-04-07 A | 40 | 100% |  |  |  | start no earlier than 2008-03-07 | Hrishikesh | 40h | 40h |
| 42 | 1.4.3 | **Design** | 4d | 2008-04-08 A | 2008-04-11 A |  | 100% |  |  |  |  |  | 32h | 32h |
| 43 | 1.4.3.1 | Design to pass user information from client to FQP | 3d | 2008-04-08 A | 2008-04-10 A | 41 | 100% |  |  |  |  | Hrishikesh | 24h | 24h |
| 44 | 1.4.3.2 | Design user interace | 1d | 2008-04-11 A | 2008-04-11 A | 43 | 100% |  |  |  |  | Hrishikesh | 8h | 8h |
| 45 | 1.4.4 | **Implementation** | 16d | 2008-04-14 A | 2008-05-07 |  | 81% | 3d | 2d |  |  |  | 128h | 104h |
| 46 | 1.4.4.1 | Implement user interface | 3d | 2008-04-14 A | 2008-04-16 A | 44 | 100% |  |  |  | start no earlier than 2008-03-20 | Hrishikesh | 24h | 24h |
| 47 | 1.4.4.2 | Changes in current query APIs | 5d | 2008-04-17 A | 2008-04-23 A | 46 | 100% |  |  |  | start no earlier than 2008-03-24 | Hrishikesh | 40h | 40h |
| 48 | 1.4.4.3 | Implementation of autheticating user | 5d | 2008-04-24 A | 2008-04-30 A | 47 | 100% |  |  |  | start no earlier than 2008-04-24 | Hrishikesh | 40h | 40h |
| 49 | 1.4.4.4 | Passing user proxy from client to FQP | 3d | 2008-05-05 | 2008-05-07 | 48 |  |  | 1d |  | finish no earlier than 2008-04-08 | Hrishikesh | 24h |  |

| ID | WBS | Task | Type | Duration | Start | Finish | Predecessors | Complete | Remaining | Total slack | Free slack | Constraint | Resources | Work | Actual work |
| --- | --- | --- | --- | --- | --- | --- | --- | --- | --- | --- | --- | --- | --- | --- | --- |
| 50 | 1.5 | **Design review by NCICB** |  | 14d | 2008-05-06 | 2008-05-23 |  |  |  | 23d |  |  |  | 160h |  |
| 51 | 1.5.1 | Path curation design review |  | 5d | 2008-05-06 | 2008-05-12 | 7 |  |  | 32d |  | start no earlier than 2008-05-06 | NCICB | 40h |  |
| 52 | 1.5.2 | Online category creation design review |  | 5d | 2008-05-19 | 2008-05-23 | 22 |  |  | 23d |  | start no earlier than 2008-05-19 | NCICB | 40h |  |
| 53 | 1.5.3 | caArray 2.0 design review |  | 5d | 2008-05-06 | 2008-05-12 | 30 |  |  | 28d |  | start no earlier than 2008-05-06 | NCICB | 40h |  |
| 54 | 1.5.4 | Query secure service design review |  | 5d | 2008-05-13 | 2008-05-19 | 42 |  |  | 23d |  | start no earlier than 2008-05-13 | NCICB | 40h |  |
| 55 | 1.6 | **QA cycle** |  | 59d | 2008-03-14 A | 2008-06-06 |  | 27% | 43.2d | 1d | 0d |  |  | 584h | 120h |
| 56 | 1.6.1 | Writing testcases for new functionalities |  | 15d | 2008-03-14 A | 2008-04-10 A |  | 100% |  |  |  |  | Madhumita | 120h | 120h |
| 57 | 1.6.2 | Build 1 for QA (caArray + query secure service) | milestone | 0d | 2008-05-08 | 2008-05-08 | 26, 37 |  |  | 5d | 0d | start no earlier than 2008-05-08 | Chandrakant |  |  |
| 58 | 1.6.3 | Testing Build 1 |  | 5d | 2008-05-08 | 2008-05-14 | 57 |  |  | 17d |  |  | Madhumita | 40h |  |
| 59 | 1.6.4 | Fix bugs reported in Build 1 |  | 8d | 2008-05-08 | 2008-05-19 | 57 |  |  | 2d | 0d |  | Hrishikesh; Lalit | 128h |  |
| 60 | 1.6.5 | Demo to washU users |  | 1d | 2008-05-20 | 2008-05-20 | 59 |  |  | 1d |  |  |  |  |  |
| 61 | 1.6.6 | Build 2 for QA + washU users (curation + online category creation) | milestone | 0d | 2008-05-22 | 2008-05-22 | 2, 17, 59 |  |  | 1d | 0d | start no earlier than 2008-05-22 | Chandrakant |  |  |
| 62 | 1.6.7 | Testing of Build 2 (by QA + washU users) |  | 5d | 2008-05-22 | 2008-05-28 | 61 |  |  | 7d |  |  | Madhumita | 40h |  |
| 63 | 1.6.8 | Regression Testing |  | 12d | 2008-05-22 | 2008-06-06 | 61 |  |  | 1d |  | start no earlier than 2008-05-19 | Chandrakant | 96h |  |
| 64 | 1.6.9 | Fix bugs reported in (Build 2 + regression testing) |  | 10d | 2008-05-22 | 2008-06-04 | 61 |  |  | 2d |  |  | Deepak; Chetan | 160h |  |
| 65 | 1.7 | **Release Candidate 1** |  | 8d | 2008-06-06 | 2008-06-18 | 55 |  |  | 1d | 0d |  |  | 152h |  |
| 66 | 1.7.1 | Release to QA + washU users for accepatance | milestone | 0d | 2008-06-06 | 2008-06-06 | 55 |  |  | 1d | 0d |  |  |  |  |
| 67 | 1.7.2 | Verification of fixed bugs |  | 3d | 2008-06-09 | 2008-06-11 | 66 |  |  | 1d | 0d |  | Madhumita | 24h |  |
| 68 | 1.7.3 | UAT by QA + washU users |  | 5d | 2008-06-12 | 2008-06-18 | 67 |  |  | 1d |  |  | washU; Madhumita | 80h |  |
| 69 | 1.7.4 | UAT bug fixing |  | 6d | 2008-06-09 | 2008-06-16 | 66 |  |  | 2d |  |  | Chandrakant | 48h |  |
| 70 | 1.8 | **Release activities** |  | 5d | 2008-06-19 | 2008-06-25 | 65 |  |  | 1d |  |  |  | 56h |  |
| 71 | 1.8.1 | Updating washU servers |  | 2d | 2008-06-19 | 2008-06-20 | 65 |  |  | 3d |  |  | Hrishikesh | 16h |  |
| 72 | 1.8.2 | Updating G-forge |  | 2d | 2008-06-19 | 2008-06-20 | 65 |  |  | 1d | 0d |  | Hrishikesh | 16h |  |
| 73 | 1.8.3 | Updating website (cab2b.wustl.edu) |  | 1d | 2008-06-23 | 2008-06-23 | 72 |  |  | 1d | 0d |  | Hrishikesh | 8h |  |
| 74 | 1.8.4 | Updating caBIG Tools Page |  | 2d | 2008-06-24 | 2008-06-25 | 73 |  |  | 1d |  |  | Hrishikesh | 16h |  |

| ID | WBS | Task | Duration | Start | Finish | Predecessors | Complete | Remaining | Total slack | Constraint | Resources | Work | Actual work |
| --- | --- | --- | --- | --- | --- | --- | --- | --- | --- | --- | --- | --- | --- |
| 75 | 1.9 | **Documentation** | 21d | 2008-04-30 A | 2008-05-30 |  | 33% | 14.04d | 0d |  |  | 384h | 127.2h |
| 76 | 1.9.1 | Admin end user manual | 15d | 2008-04-30 A | 2008-05-23 |  | 50% | 7.5d | 5d | finish no earlier than 2008-05-23 | Madhumita | 120h | 60h |
| 77 | 1.9.2 | Admin design document | 10d | 2008-04-30 A | 2008-05-23 |  | 20% | 8d | 15d | finish no earlier than 2008-05-23 | Atul | 80h | 16h |
| 78 | 1.9.3 | Update design document | 7d | 2008-05-22 | 2008-05-30 |  |  |  | 0d | finish no earlier than 2008-05-30 | Chetan | 56h |  |
| 79 | 1.9.4 | Update end user manual update | 16d | 2008-05-09 A | 2008-05-30 |  | 40% | 9.6d | 0d | finish no earlier than 2008-05-30 | Madhumita | 128h | 51.2h |
| 80 | 1.10 | **Documentation Review** | 30d | 2008-06-02 | 2008-07-11 |  |  |  | 0d |  |  | 240h |  |
| 81 | 1.10.1 | Review by NCICB Leads | 15d | 2008-06-02 | 2008-06-20 | 75 |  |  | 0d |  | NCICB | 120h |  |
| 82 | 1.10.2 | D&T Review | 15d | 2008-06-23 | 2008-07-11 | 81 |  |  | 0d | start no earlier than 2008-06-02 | NCICB | 120h |  |
| 83 | 1.11 | Final Documentation | 7d | 2008-07-14 | 2008-07-22 | 80 |  |  | 0d |  | Madhumita | 56h |  |
