# caB2B_ProjectPlan_v2

Schedule from MS Project, 2006-07-05 to 2007-05-08.

## Calendars

- Standard: Mon-Fri 08:00-12:00, 13:00-17:00; Sat-Sun off.

## Resources

| Resource |
| --- |
| Chetan |
| Mahesh |
| Srinat |
| Srinath |
| Munesh |
| Pratibha |
| Chandrakant |
| Srikanth |
| Rakesh |
| Arun |
| Team |

## Schedule

| ID | WBS | Task | Duration | Start | Finish | Predecessors | Total slack | Free slack | Resources | Work |
| --- | --- | --- | --- | --- | --- | --- | --- | --- | --- | --- |
| 1 | 1 | **caB2B Project Plan** | 220d? | 2006-07-05 | 2007-05-08 |  | 0d |  |  | 5040h |
| 2 | 1.1 | **Project Inception** | 20d | 2006-07-05 | 2006-08-01 |  | 10d | 0d |  | 640h |
| 3 | 1.1.1 | Project Charter | 10d | 2006-07-05 | 2006-07-18 |  | 20d |  | Rakesh; Srikanth | 160h |
| 4 | 1.1.2 | Document use cases, requirements and mock screenshots | 20d | 2006-07-05 | 2006-08-01 |  | 10d |  | Srikanth; Pratibha; Rakesh | 480h |
| 5 | 1.2 | **Elaboration** | 40d | 2006-07-05 | 2006-08-29 |  | 0d |  |  | 320h |
| 6 | 1.2.1 | Deploy caGrid 1.0 | 20d | 2006-07-05 | 2006-08-01 |  | 0d |  | Munesh [50%] | 80h |
| 7 | 1.2.2 | Prototype caB2B use cases for CQL queries and review them for support in caGrid query | 10d | 2006-08-02 | 2006-08-15 | 6 | 0d |  | Chandrakant | 80h |
| 8 | 1.2.3 | **UML modelling** | 30d | 2006-07-05 | 2006-08-15 |  | 40d | 0d |  | 80h |
| 9 | 1.2.3.1 | caTissue extensions | 10d | 2006-07-05 | 2006-07-18 |  | 40d | 0d | Pratibha [50%] | 40h |
| 10 | 1.2.3.2 | caFunctionExpress extensions | 10d | 2006-07-19 | 2006-08-01 | 9 | 40d | 0d | Pratibha [50%] | 40h |
| 11 | 1.2.3.3 | Template matching | 10d | 2006-08-02 | 2006-08-15 | 10 | 40d |  |  |  |
| 12 | 1.2.4 | Draft design, architecture, mock user interface | 10d | 2006-08-16 | 2006-08-29 | 8 | 40d | 0d | Mahesh | 80h |
| 13 | 1.3 | **Construction** | 200d? | 2006-08-02 | 2007-05-08 | 2 | 0d |  |  | 4080h |
| 14 | 1.3.1 | **Prototype** | 40d | 2006-08-02 | 2006-09-26 |  | 10d |  |  | 800h |
| 15 | 1.3.1.1 | **caB2B Client** | 40d | 2006-08-02 | 2006-09-26 |  | 10d |  |  | 680h |
| 16 | 1.3.1.1.1 | **Experiment** | 20d | 2006-08-30 | 2006-09-26 |  | 40d |  |  | 160h |
| 17 | 1.3.1.1.1.1 | Design | 5d | 2006-08-30 | 2006-09-05 | 12 | 40d | 0d | Mahesh | 40h |
| 18 | 1.3.1.1.1.2 | Create | 15d | 2006-09-06 | 2006-09-26 | 17 | 40d | 0d | Mahesh | 120h |
| 19 | 1.3.1.1.2 | **Viewers** | 20d | 2006-08-02 | 2006-08-29 |  | 55d |  |  | 160h |
| 20 | 1.3.1.1.2.1 | Template matching | 10d | 2006-08-02 | 2006-08-15 |  | 55d | 0d | Chetan | 80h |
| 21 | 1.3.1.1.2.2 | Spreadsheet view | 10d | 2006-08-16 | 2006-08-29 | 20 | 55d | 0d | Chetan | 80h |
| 22 | 1.3.1.1.3 | **Basic query interface** | 30d | 2006-08-16 | 2006-09-26 |  | 0d |  |  | 240h |
| 23 | 1.3.1.1.3.1 | Design | 10d | 2006-08-16 | 2006-08-29 | 7 | 0d |  | Chandrakant | 80h |
| 24 | 1.3.1.1.3.2 | User interface | 15d | 2006-08-30 | 2006-09-19 | 23 | 0d |  | Chandrakant | 120h |
| 25 | 1.3.1.1.3.3 | Results view | 5d | 2006-09-20 | 2006-09-26 | 24 | 0d |  | Chandrakant | 40h |

| ID | WBS | Task | Duration | Start | Finish | Predecessors | Total slack | Free slack | Resources | Work |
| --- | --- | --- | --- | --- | --- | --- | --- | --- | --- | --- |
| 26 | 1.3.1.1.4 | **Local database - Minimal Experiment Dataset** | 15d | 2006-08-02 | 2006-08-22 |  | 80d |  |  | 120h |
| 27 | 1.3.1.1.4.1 | Schema design | 5d | 2006-08-02 | 2006-08-08 | 2 | 80d | 0d | Srinath | 40h |
| 28 | 1.3.1.1.4.2 | DAO interface (APIs) | 10d | 2006-08-09 | 2006-08-22 | 27 | 80d | 0d | Srinath | 80h |
| 29 | 1.3.1.2 | **Grid enable application - Goal** | 15d | 2006-08-02 | 2006-08-22 | 6 | 185d |  |  | 120h |
| 30 | 1.3.1.2.1 | caTissue Core data service | 5d | 2006-08-02 | 2006-08-08 |  | 185d | 0d | Munesh | 40h |
| 31 | 1.3.1.2.2 | caFunctionExpress data service | 5d | 2006-08-09 | 2006-08-15 | 30 | 185d | 0d | Munesh | 40h |
| 32 | 1.3.1.2.3 | Template matching analytical service | 5d | 2006-08-16 | 2006-08-22 | 31 | 185d |  | Munesh | 40h |
| 33 | 1.3.2 | **Annual meeting** | 120d | 2006-08-02 | 2007-01-16 |  | 0d |  |  | 1840h |
| 34 | 1.3.2.1 | **Query interface** | 90d | 2006-08-02 | 2006-12-05 |  | 30d |  |  | 720h |
| 35 | 1.3.2.1.1 | Design | 5d | 2006-09-27 | 2006-10-03 | 25 | 0d |  | Chandrakant | 40h |
| 36 | 1.3.2.1.2 | Distributed query interface | 20d | 2006-10-04 | 2006-10-31 | 35 | 0d |  | Chandrakant | 160h |
| 37 | 1.3.2.1.3 | Results view enhancements | 20d | 2006-11-01 | 2006-11-28 | 36 | 0d |  | Chandrakant | 160h |
| 38 | 1.3.2.1.4 | Export | 5d | 2006-11-29 | 2006-12-05 | 37 | 0d |  | Chandrakant | 40h |
| 39 | 1.3.2.1.5 | Define and save view | 20d | 2006-08-02 | 2006-08-29 |  | 80d | 0d | Arun | 160h |
| 40 | 1.3.2.1.6 | Save and edit query | 20d | 2006-08-30 | 2006-09-26 | 39 | 80d |  | Arun | 160h |
| 41 | 1.3.2.2 | **Experiment** | 40d | 2006-09-27 | 2006-11-21 |  | 40d |  |  | 320h |
| 42 | 1.3.2.2.1 | Design | 5d | 2006-09-27 | 2006-10-03 | 18 | 40d | 0d | Mahesh | 40h |
| 43 | 1.3.2.2.2 | Edit | 10d | 2006-10-04 | 2006-10-17 | 42 | 40d | 0d | Mahesh | 80h |
| 44 | 1.3.2.2.3 | Delete | 10d | 2006-10-18 | 2006-10-31 | 43 | 40d | 0d | Mahesh | 80h |
| 45 | 1.3.2.2.4 | Local CSM privileges | 15d | 2006-11-01 | 2006-11-21 | 44 | 40d |  | Mahesh | 120h |
| 46 | 1.3.2.3 | **Local database - Dynamic extensions** | 25d | 2006-08-23 | 2006-09-26 |  | 80d |  |  | 200h |
| 47 | 1.3.2.3.1 | Schema design | 5d | 2006-08-23 | 2006-08-29 | 28 | 80d | 0d | Srinath | 40h |
| 48 | 1.3.2.3.2 | DAO interface (APIs) | 20d | 2006-08-30 | 2006-09-26 | 47 | 80d |  | Srinath | 160h |
| 49 | 1.3.2.4 | **caGrid Security** | 30d | 2006-12-06 | 2007-01-16 |  | 0d |  |  | 240h |
| 50 | 1.3.2.4.1 | caB2B client | 10d | 2006-12-06 | 2006-12-19 | 38 | 0d |  | Chandrakant | 80h |
| 51 | 1.3.2.4.2 | caTissue Core | 20d | 2006-12-20 | 2007-01-16 | 50 | 0d |  | Chandrakant | 160h |

Notes:
- 26: Store minimal microarray dataset
- 46: Store datasets from any dataservice or results of analytical service

| ID | WBS | Task | Duration | Start | Finish | Predecessors | Total slack | Free slack | Resources | Work |
| --- | --- | --- | --- | --- | --- | --- | --- | --- | --- | --- |
| 52 | 1.3.2.5 | **Viewers** | 45d | 2006-08-30 | 2006-10-31 |  | 55d |  |  | 360h |
| 53 | 1.3.2.5.1 | Chart viewer | 5d | 2006-08-30 | 2006-09-05 | 21 | 55d | 0d | Chetan | 40h |
| 54 | 1.3.2.5.2 | Heatmap and dendrogram viewer | 5d | 2006-09-06 | 2006-09-12 | 53 | 55d | 0d | Chetan | 40h |
| 55 | 1.3.2.5.3 | K-Means viewer | 5d | 2006-09-13 | 2006-09-19 | 54 | 55d | 0d | Chetan | 40h |
| 56 | 1.3.2.5.4 | Self Organizing Map viewer | 5d | 2006-09-20 | 2006-09-26 | 55 | 55d | 0d | Chetan | 40h |
| 57 | 1.3.2.5.5 | Principle Component Analysis viewer | 5d | 2006-09-27 | 2006-10-03 | 56 | 55d | 0d | Chetan | 40h |
| 58 | 1.3.2.5.6 | Support Vector Machine viewer | 5d | 2006-10-04 | 2006-10-10 | 57 | 55d | 0d | Chetan | 40h |
| 59 | 1.3.2.5.7 | Comparative Marker Selection viewer | 5d | 2006-10-11 | 2006-10-17 | 58 | 55d | 0d | Chetan | 40h |
| 60 | 1.3.2.5.8 | Weighted Voting viewer | 5d | 2006-10-18 | 2006-10-24 | 59 | 55d | 0d | Chetan | 40h |
| 61 | 1.3.2.5.9 | Consensus Clustering viewer | 5d | 2006-10-25 | 2006-10-31 | 60 | 55d |  | Chetan | 40h |
| 62 | 1.3.3 | **Feature complete - Beta** | 60d | 2007-01-17 | 2007-04-10 | 33 | 0d |  |  | 1120h |
| 63 | 1.3.3.1 | Query interface enhancements | 20d | 2007-01-17 | 2007-02-13 | 28 | 0d |  | Srinath | 160h |
| 64 | 1.3.3.2 | **Workflow support** | 40d | 2007-02-14 | 2007-04-10 |  | 0d |  |  | 320h |
| 65 | 1.3.3.2.1 | User interface | 20d | 2007-02-14 | 2007-03-13 | 63 | 0d |  | Srinath | 160h |
| 66 | 1.3.3.2.2 | Backend | 20d | 2007-03-14 | 2007-04-10 | 65 | 0d |  | Srinath | 160h |
| 67 | 1.3.3.3 | Support for any new services | 40d | 2007-01-17 | 2007-03-13 |  | 40d |  | Team | 320h |
| 68 | 1.3.3.4 | Integration testing | 20d | 2007-01-17 | 2007-02-13 |  | 60d |  | Team | 160h |
| 69 | 1.3.3.5 | Bug fixing | 20d | 2007-01-17 | 2007-02-13 |  | 60d |  | Team | 160h |
| 70 | 1.3.4 | **Final release** | 20d? | 2007-04-11 | 2007-05-08 | 64 | 0d |  |  | 320h |
| 71 | 1.3.4.1 | End user face to face meeting | 1d? | 2007-04-11 | 2007-04-11 |  | 19d |  |  |  |
| 72 | 1.3.4.2 | Bug fixing | 20d | 2007-04-11 | 2007-05-08 |  | 0d |  | Team | 160h |
| 73 | 1.3.4.3 | Documentation | 20d | 2007-04-11 | 2007-05-08 |  | 0d |  | Team | 160h |
