# caB2B_may

Schedule from MS Project, 2007-04-27 to 2007-07-19, A marks actual dates.
p

## Calendars

- Standard: Mon-Fri 08:00-12:00, 13:00-17:00; Sat-Sun off. Exceptions (off unless hours are given): 2007-04-27, 2007-05-01.

## Resources

| Resource |
| --- |
| Rahul |
| Srinath |
| Chetan |
| Deepak |
| Chetan BH |
| Hrishikesh |
| Chandrakant |
| Mahesh |
| Juber |
| Sayali |
| Pratibha |
| caTissue Team |
| café Team |
| End users |
| Mukesh |
| Rakesh |
| Srikanth |

## Schedule

| ID | WBS | Task | Type | Duration | Start | Finish | Predecessors | Complete | Remaining | Total slack | Free slack | Constraint | Resources | Work | Actual work |
| --- | --- | --- | --- | --- | --- | --- | --- | --- | --- | --- | --- | --- | --- | --- | --- |
| 1 | 1 | **caB2b plan** |  | 58d? | 2007-04-27 A | 2007-07-19 |  | 12% | 51.32d? | 0d |  |  |  | 2616h | 216.8h |
| 2 | 1.1 | design generic query result UI for class, category and complex attributes |  | 6d | 2007-05-07 A | 2007-05-14 |  | 20% | 4.8d | 17d | 0d | start no earlier than 2007-05-07 | Rahul | 48h | 9.6h |
| 3 | 1.2 | **caArray Support in query module** |  | 30d | 2007-04-27 A | 2007-06-11 |  | 14% | 25.92d | 0d |  |  |  | 288h | 39.2h |
| 4 | 1.2.1 | backend to changes to show outgoing association | milestone | 0d | 2007-04-27 A | 2007-04-27 A |  | 100% |  |  |  |  | Rahul |  |  |
| 5 | 1.2.2 | UI changes to generate outgoing association query |  | 3d | 2007-05-15 | 2007-05-17 | 2 |  |  | 17d |  |  | Rahul | 24h |  |
| 6 | 1.2.3 | design and implementation query result for outgoing asso. |  | 7d | 2007-04-30 A | 2007-05-09 |  | 70% | 2.1d | 0d |  |  | Srinath | 56h | 39.2h |
| 7 | 1.2.4 | Design 3D results class |  | 4d | 2007-05-10 | 2007-05-15 | 6 |  |  | 0d |  |  | Srinath | 32h |  |
| 8 | 1.2.5 | caArray result Transformer |  | 6d | 2007-05-16 | 2007-05-23 | 7 |  |  | 0d |  |  | Srinath | 48h |  |
| 9 | 1.2.6 | BioAssayData Transformer |  | 4d | 2007-05-24 | 2007-05-29 | 8 |  |  | 0d |  |  | Srinath | 32h |  |
| 10 | 1.2.7 | saving BioDataCube |  | 9d | 2007-05-30 | 2007-06-11 | 9 |  |  | 0d |  |  | Srinath | 72h |  |
| 11 | 1.2.8 | UI for 3D array renderer |  | 3d | 2007-05-24 | 2007-05-28 | 8, 2 |  |  | 10d |  |  | Rahul | 24h |  |
| 12 | 1.3 | **Open Experiment** |  | 0d | 2007-04-27 A | 2007-04-27 A |  | 100% |  |  |  |  |  |  |  |
| 13 | 1.3.1 | Backend support for fetching experiment details | milestone | 0d | 2007-04-27 A | 2007-04-27 A |  | 100% |  |  |  |  | Chetan BH |  |  |
| 14 | 1.3.2 | UI for opening an experiment | milestone | 0d | 2007-04-27 A | 2007-04-27 A |  | 100% |  |  |  |  | Deepak |  |  |
| 15 | 1.3.3 | Integrate UI with backend | milestone | 0d | 2007-04-27 A | 2007-04-27 A |  | 100% |  |  |  |  | Deepak; Chetan BH |  |  |
| 16 | 1.4 | **View experiment data sheet** |  | 8d | 2007-04-27 A | 2007-05-10 |  | 60% | 3.2d | 19d |  |  |  | 48h | 28.8h |
| 17 | 1.4.1 | UI for showing spreadsheet of selected category dataset | milestone | 0d | 2007-04-27 A | 2007-04-27 A |  | 100% |  |  |  |  | Deepak |  |  |
| 18 | 1.4.2 | showing chart for selected data |  | 6d | 2007-05-03 A | 2007-05-10 | 17 | 60% | 2.4d | 19d | 0d | start no earlier than 2007-05-03 | Chetan | 48h | 28.8h |
| 19 | 1.5 | **Filter Experiment Data set** |  | 8d | 2007-04-27 A | 2007-05-10 |  | 67% | 2.67d | 22d |  |  |  | 80h | 56h |
| 20 | 1.5.1 | filter design |  | 1d | 2007-04-27 A | 2007-04-27 A |  | 100% |  |  |  |  | Hrishikesh [88.9%]; Rahul [88.9%] | 16h | 16h |
| 21 | 1.5.2 | **UI to filter data set** |  | 8d | 2007-04-30 A | 2007-05-10 |  | 63% | 3d | 22d |  |  |  | 64h | 40h |
| 22 | 1.5.2.1 | Changes in UI for filter |  | 3d | 2007-05-08 | 2007-05-10 | 24 |  |  | 22d |  | start no earlier than 2007-05-08 | Hrishikesh | 24h |  |
| 23 | 1.5.2.2 | Number filter (Silder) |  | 2d | 2007-04-30 A | 2007-05-02 A | 20 | 100% |  |  |  |  | Hrishikesh | 16h | 16h |
| 24 | 1.5.2.3 | pattern filter for strings |  | 1d | 2007-05-03 A | 2007-05-03 A | 23 | 100% |  |  |  |  | Hrishikesh | 8h | 8h |
| 25 | 1.5.2.4 | enumeration filter |  | 2d | 2007-05-04 A | 2007-05-07 A | 24 | 100% |  |  |  |  | Hrishikesh | 16h | 16h |

Notes:
- 2: design generic query result panel to support class, category and complex attributes/ This includes design and changes in existing code.
- 18: date moved since chetan joined on 3rd may

| ID | WBS | Task | Type | Duration | Start | Finish | Predecessors | Complete | Remaining | Total slack | Free slack | Constraint | Resources | Work | Actual work |
| --- | --- | --- | --- | --- | --- | --- | --- | --- | --- | --- | --- | --- | --- | --- | --- |
| 26 | 1.6 | **Experiment Data Category** |  | 8d | 2007-05-09 | 2007-05-18 |  |  |  | 16d |  |  |  | 64h |  |
| 27 | 1.6.1 | Create category for with filtered data-set |  | 4d | 2007-05-09 | 2007-05-14 | 23 |  |  | 16d | 0d | start no earlier than 2007-05-09 | Juber | 32h |  |
| 28 | 1.6.2 | UI for data category hierarchy (Slide 44) |  | 4d | 2007-05-15 | 2007-05-18 | 27, 25 |  |  | 16d |  |  | Hrishikesh | 32h |  |
| 29 | 1.7 | **Analytical services** |  | 12d | 2007-04-30 A | 2007-05-16 |  | 30% | 8.4d | 18d |  |  |  | 120h | 36h |
| 30 | 1.7.1 | GenePattern analysis service investigation |  | 3d | 2007-04-30 A | 2007-05-03 |  | 50% | 1.5d | 3d | 0d |  | Chandrakant | 24h | 12h |
| 31 | 1.7.2 | UI to accept input for service |  | 3d | 2007-05-11 | 2007-05-15 | 30, 18 |  |  | 19d |  |  | Chetan | 24h |  |
| 32 | 1.7.3 | Invoking service and processing response |  | 6d | 2007-05-04 A | 2007-05-11 | 30 | 50% | 3d | 0d |  |  | Chandrakant | 48h | 24h |
| 33 | 1.7.4 | UI changes to call backend |  | 3d | 2007-05-14 | 2007-05-16 | 32 |  |  | 0d |  |  | Chandrakant | 24h |  |
| 34 | 1.8 | **Server issues** |  | 30d | 2007-04-27 A | 2007-06-11 |  | 16% | 25.1d | 0d |  |  |  | 248h | 47.2h |
| 35 | 1.8.1 | Category as output backend | milestone | 0d | 2007-04-27 A | 2007-04-27 A |  | 100% |  |  |  |  | Srinath |  |  |
| 36 | 1.8.2 | **View Category in results** |  | 14d | 2007-04-27 A | 2007-05-18 |  | 44% | 7.78d | 16d |  |  |  | 80h | 40h |
| 37 | 1.8.2.1 | displaying records |  | 4d | 2007-04-27 A | 2007-05-04 A |  | 100% |  |  |  |  | Mahesh | 40h | 40h |
| 38 | 1.8.2.2 | querying related classes |  | 5d | 2007-05-14 | 2007-05-18 | 39 |  |  | 16d |  |  | Deepak | 40h |  |
| 39 | 1.8.3 | Integration with backend |  | 3d | 2007-05-07 A | 2007-05-11 | 35, 37 | 30% | 2.1d | 16d | 0d |  | Deepak | 24h | 7.2h |
| 40 | 1.8.4 | **Adding category results to data list** |  | 18d | 2007-05-17 | 2007-06-11 |  |  |  | 0d |  |  |  | 144h |  |
| 41 | 1.8.4.1 | Design |  | 7d | 2007-05-17 | 2007-05-25 | 33 |  |  | 0d |  |  | Chandrakant | 56h |  |
| 42 | 1.8.4.2 | implementation |  | 11d | 2007-05-28 | 2007-06-11 | 41 |  |  | 0d |  |  | Deepak | 88h |  |
| 43 | 1.9 | **Data services** |  | 1d? | 2007-04-30 | 2007-04-30 |  |  |  | 57d |  |  |  | 32h |  |
| 44 | 1.9.1 | Getting caArray data related to caTissue extended model. |  | 1d? | 2007-04-30 | 2007-04-30 |  |  |  | 57d |  |  | Srikanth; Pratibha | 16h |  |
| 45 | 1.9.2 | caTissue extended models (with caArray) |  | 1d? | 2007-04-30 | 2007-04-30 |  |  |  | 57d |  |  | caTissue Team | 8h |  |
| 46 | 1.9.3 | Extended caFE model for caArray (Grid Service) |  | 1d? | 2007-04-30 | 2007-04-30 |  |  |  | 57d |  |  | café Team | 8h |  |
| 47 | 1.10 | **Release Activities** |  | 28d | 2007-06-12 | 2007-07-19 | 12, 16, 19, 26, 29, 34 |  |  | 0d |  |  |  | 1688h |  |
| 48 | 1.10.1 | Testing and bug fixes (without caArray) |  | 10d | 2007-06-12 | 2007-06-25 |  |  |  | 18d |  |  | Deepak; Hrishikesh | 128h |  |
| 49 | 1.10.2 | Testing and bug fixes (for caArray) |  | 6d | 2007-06-12 | 2007-06-19 | 3 |  |  | 0d |  |  | Rahul; Srinath | 96h |  |
| 50 | 1.10.3 | Preparing installer |  | 3d | 2007-06-12 | 2007-06-14 |  |  |  | 3d | 0d |  | Juber | 24h |  |
| 51 | 1.10.4 | Updated design document |  | 10d | 2007-06-12 | 2007-06-25 |  |  |  | 18d |  |  | Rahul; Chandrakant | 160h |  |
| 52 | 1.10.5 | End user manual |  | 5d | 2007-06-12 | 2007-06-18 |  |  |  | 18d | 0d |  | Sayali | 40h |  |
| 53 | 1.10.6 | Test cases and test execution report |  | 5d | 2007-06-12 | 2007-06-18 |  |  |  | 1d |  |  | Sayali | 40h |  |
| 54 | 1.10.7 | Beta release |  | 2d | 2007-06-20 | 2007-06-21 | 49, 50, 53 |  |  | 0d |  |  | Chandrakant [50%]; Rahul [50%] | 16h |  |
| 55 | 1.10.8 | Add caB2B project in Tools webpage of caBIG |  | 1d | 2007-06-15 | 2007-06-15 | 50 |  |  | 21d | 0d |  | Juber | 8h |  |
| 56 | 1.10.9 | Set-up wiki site for caB2B |  | 3d | 2007-06-18 | 2007-06-20 | 55 |  |  | 21d |  |  | Juber | 24h |  |
| 57 | 1.10.10 | Review of user manual document by end users |  | 5d | 2007-06-19 | 2007-06-25 | 52 |  |  | 18d |  |  | Mukesh | 40h |  |
| 58 | 1.10.11 | Installation guide |  | 2d | 2007-06-22 | 2007-06-25 | 50, 54 |  |  | 18d |  |  | Rahul | 16h |  |
| 59 | 1.10.12 | Beta testing by end users |  | 10d | 2007-06-22 | 2007-07-05 | 54 |  |  | 10d |  |  | Mukesh | 80h |  |
| 60 | 1.10.13 | Beta release bug fixes |  | 20d | 2007-06-22 | 2007-07-19 | 54 |  |  | 0d |  |  | Deepak; Hrishikesh; Chetan; Juber | 512h |  |
| 61 | 1.10.14 | Final use case document |  | 20d | 2007-06-12 | 2007-07-09 |  |  |  | 8d |  |  | Chandrakant; Rakesh; Srikanth | 480h |  |
| 62 | 1.10.15 | Lessons learned document |  | 3d | 2007-06-22 | 2007-06-26 | 54 |  |  | 17d |  |  | Srinath | 24h |  |

Notes:
- 38: In related classes, show only related classes of the root entity of category.
- 40: need to finilize the scope: / 1. decompose output of cateory into entity tree and then add to data list / 2. add category as it (similar to normal class)
