# caB2B_Year_2_Edit

Schedule from MS Project, 2007-08-06 to 2011-10-17, A marks actual dates.
PSPL

## Calendars

- Standard: Mon-Fri 08:00-12:00, 13:00-17:00; Sat-Sun off. Exceptions (off unless hours are given): 2007-08-15, 2007-08-28, 2007-09-25, 2007-10-02, 2007-11-08 to 2007-11-09.

## Resources

| Resource |
| --- |
| chetan_patil |
| Rahul Ner |
| chandrakant_talele |
| srinath_k |
| deepak_shingan |
| atul_jawale |
| hrishikesh_rajpathak |
| Jasbir |
| Madhurima |
| Lalit |
| Rajesh |
| Madhumita |

## Schedule

| ID | WBS | Task | Duration | Start | Finish | Predecessors | Complete | Remaining | Baseline start | Baseline finish | Baseline duration | Total slack | Free slack | Resources | Work | Actual work | Text1 |
| --- | --- | --- | --- | --- | --- | --- | --- | --- | --- | --- | --- | --- | --- | --- | --- | --- | --- |
| 1 | 1 | **caB2B Year 2** | 1090d? | 2007-08-06 A | 2011-10-17 |  | 25% | 818.29d? | 2007-08-06 | 2013-01-02 | 1411d? | 0d |  |  | 4318.4h | 3800.97h |  |
| 2 | 1.1 | **Mile Stone 1** | 66d | 2007-08-06 A | 2007-11-13 |  | 98% | 0.99d | 2007-08-06 | 2007-10-09 | 45d | 998.73d | 0d |  | 1178.4h | 1168.8h | Aug-Sept |
| 3 | 1.1.1 | **Saved Query** | 49.6d | 2007-08-06 A | 2007-10-18 A |  | 100% |  | 2007-08-06 | 2007-10-03 | 41d |  |  |  | 424h | 424h |  |
| 4 | 1.1.1.1 | query model changes | 5d | 2007-08-06 A | 2007-08-10 A |  | 100% |  | 2007-08-06 | 2007-08-10 | 5d |  |  | chetan_patil | 40h | 40h |  |
| 5 | 1.1.1.2 | specifying hibernate mappings, schema generation | 10d | 2007-08-13 A | 2007-08-29 A | 4 | 100% |  | 2007-08-13 | 2007-08-27 | 9d |  |  | chetan_patil | 88h | 88h |  |
| 6 | 1.1.1.3 | UI changes to integrate and testing | 3d | 2007-08-28 A | 2007-08-31 A | 5 | 100% |  | 2007-08-28 | 2007-08-29 | 1d |  |  | chetan_patil | 32h | 32h |  |
| 7 | 1.1.1.4 | Regenrate UI (DAG etc) from saved query | 10d | 2007-10-04 A | 2007-10-18 A | 6, 14 | 100% |  | 2007-08-30 | 2007-09-12 | 10d |  |  | deepak_shingan | 80h | 80h |  |
| 8 | 1.1.1.5 | **Parametrized query** | 39.6d | 2007-08-06 A | 2007-10-04 A |  | 100% |  | 2007-08-06 | 2007-10-03 | 41d |  |  |  | 184h | 184h |  |
| 9 | 1.1.1.5.1 | develop wireframes | 2d | 2007-08-06 A | 2007-08-07 A |  | 100% |  | 2007-08-06 | 2007-08-07 | 2d |  |  | Rahul Ner | 16h | 16h |  |
| 10 | 1.1.1.5.2 | query model changes | 5d | 2007-08-30 A | 2007-09-05 A | 9 | 100% |  | 2007-08-30 | 2007-09-05 | 5d |  |  | chetan_patil | 40h | 40h |  |
| 11 | 1.1.1.5.3 | specifying hibernate mappings, schema generation | 3d | 2007-09-06 A | 2007-09-10 A | 10 | 100% |  | 2007-09-06 | 2007-09-10 | 3d |  |  | chetan_patil | 24h | 24h |  |
| 12 | 1.1.1.5.4 | develop screen to define parameterized query | 6d | 2007-09-17 A | 2007-09-24 A | 11 | 100% |  | 2007-09-17 | 2007-09-24 | 6d |  |  | deepak_shingan | 48h | 48h |  |
| 13 | 1.1.1.5.5 | develop screen to execute parameterized query | 2d | 2007-09-25 A | 2007-09-27 A | 12 | 100% |  | 2007-09-25 | 2007-09-27 | 3d |  |  | deepak_shingan | 24h | 24h |  |
| 14 | 1.1.1.5.6 | UI changes to integrate and testing | 3.6d | 2007-09-28 A | 2007-10-04 A | 13 | 100% |  | 2007-09-28 | 2007-10-03 | 4d |  |  | deepak_shingan | 32h | 32h |  |
| 15 | 1.1.2 | **Create Data view (CDCin Experiment)** | 28d | 2007-08-06 A | 2007-09-14 A |  | 100% |  | 2007-08-06 | 2007-10-08 | 43.4d |  |  |  | 232h | 232h |  |
| 16 | 1.1.2.1 | develop wireframes | 1d | 2007-08-06 A | 2007-08-06 A |  | 100% |  | 2007-08-06 | 2007-08-06 | 1d |  |  | hrishikesh_rajpathak | 8h | 8h |  |
| 17 | 1.1.2.2 | deveople screen to create CDC | 7d | 2007-08-07 A | 2007-08-16 A | 16 | 100% |  | 2007-08-07 | 2007-08-16 | 7d |  |  | hrishikesh_rajpathak | 56h | 56h |  |
| 18 | 1.1.2.3 | design CDC backend | 7d | 2007-08-17 A | 2007-08-27 A | 17 | 100% |  | 2007-08-17 | 2007-08-27 | 7d |  |  | hrishikesh_rajpathak | 56h | 56h |  |
| 19 | 1.1.2.4 | saving CDC | 4d | 2007-08-28 A | 2007-09-03 A | 18 | 100% |  | 2007-08-28 | 2007-09-03 | 4d |  |  | hrishikesh_rajpathak [125%] | 40h | 40h |  |
| 20 | 1.1.2.5 | populating and fetching data for CDC | 8d | 2007-09-04 A | 2007-09-14 A | 19 | 100% |  | 2007-09-04 | 2007-09-14 | 8d |  |  | hrishikesh_rajpathak [112.5%] | 72h | 72h |  |
| 21 | 1.1.3 | **New viewers (metadata based)** | 43d | 2007-08-06 A | 2007-10-09 A |  | 100% |  | 2007-08-06 | 2007-09-17 | 29d |  |  |  | 256h | 256h |  |
| 22 | 1.1.3.1 | design for generic viewer | 13.3d | 2007-08-06 A | 2007-09-05 A |  | 100% |  | 2007-08-06 | 2007-08-14 | 7d |  |  | chandrakant_talele | 56h | 56h |  |
| 23 | 1.1.3.2 | **Heat Map viewer** | 36d | 2007-08-16 A | 2007-10-09 A | 22 | 100% |  | 2007-08-16 | 2007-09-17 | 22d |  |  |  | 200h | 200h |  |
| 24 | 1.1.3.2.1 | find appropriate 3rd party library | 13d | 2007-08-16 A | 2007-09-05 A |  | 100% |  | 2007-08-16 | 2007-08-30 | 9d |  |  | deepak_shingan | 104h | 104h |  |
| 25 | 1.1.3.2.2 | finalize operation to be done on heat map | 3d | 2007-09-06 A | 2007-09-10 A | 24 | 100% |  | 2007-08-31 | 2007-09-04 | 3d |  |  | deepak_shingan | 24h | 24h |  |
| 26 | 1.1.3.2.3 | implement heat map viewer | 17d | 2007-09-11 A | 2007-10-09 A | 25 | 100% |  | 2007-09-05 | 2007-09-17 | 9d |  |  | chandrakant_talele [50%] | 72h | 72h |  |

Notes:
- 8: This is User friendly Search for experiment data / Define category along with result view. Using this, user should be able to just define limit and get results. No need to worry about DAG, paths and no need to select the result view. / Refer to caTissue for requirments and screens. / Special Case : Category Query for a one-many attribute / (Queries like Participant with PMI = 1 and 2)
- 15: Show datalist, select subtree from data list as spreadsheet
- 21: Annotation viewer (gene Inspector) embedded webpage - browser window (refer to FE) / Pathway browser / Literature network / heat map

| ID | WBS | Task | Duration | Start | Finish | Predecessors | Complete | Remaining | Baseline start | Baseline finish | Baseline duration | Total slack | Free slack | Constraint | Resources | Work | Actual work |
| --- | --- | --- | --- | --- | --- | --- | --- | --- | --- | --- | --- | --- | --- | --- | --- | --- | --- |
| 27 | 1.1.4 | **Spreadsheet Component** | 19d | 2007-08-06 A | 2007-09-03 A |  | 100% |  | 2007-08-06 | 2007-09-10 | 24d |  |  |  |  | 160h | 160h |
| 28 | 1.1.4.1 | Export | 2d | 2007-08-06 A | 2007-08-07 A |  | 100% |  | 2007-08-06 | 2007-08-07 | 2d |  |  |  | atul_jawale | 16h | 16h |
| 29 | 1.1.4.2 | Specify view for Custom data category | 3d | 2007-08-08 A | 2007-08-10 A | 28 | 100% |  | 2007-08-08 | 2007-08-10 | 3d |  |  |  | atul_jawale | 24h | 24h |
| 30 | 1.1.4.3 | Filters like spot fire | 10d | 2007-08-13 A | 2007-08-27 A | 29 | 100% |  | 2007-08-13 | 2007-08-27 | 10d |  |  |  | atul_jawale | 80h | 80h |
| 31 | 1.1.4.4 | Add New ,copy ,paste | 3d | 2007-08-28 A | 2007-09-03 A | 30 | 100% |  | 2007-08-28 | 2007-09-03 | 3d |  |  |  | atul_jawale [166.7%] | 40h | 40h |
| 32 | 1.1.5 | **Bug fixes** | 26.8d | 2007-09-03 A | 2007-10-11 | 27 | 80% | 5.36d |  |  |  | 1019.93d |  |  |  | 50.4h | 40.8h |
| 33 | 1.1.5.1 | Partial relavance based search | 6d | 2007-09-03 A | 2007-09-10 A |  | 100% |  |  |  |  |  |  | start no earlier than 2007-09-03 | Rahul Ner [50%] | 24h | 24h |
| 34 | 1.1.5.2 | Path replication bug | 6d | 2007-09-28 A | 2007-10-11 |  | 60% | 2.4d |  |  |  | 1016.89d |  | start no earlier than 2007-09-28 | srinath_k [50%] | 26.4h | 16.8h |
| 35 | 1.1.6 | QA cycle | 5d | 2007-10-29 A | 2007-11-02 A | 3, 15, 21, 34 | 100% |  |  |  |  |  |  | start no earlier than 2007-10-29 | deepak_shingan [50%]; Madhurima [50%] | 40h | 40h |
| 36 | 1.1.7 | Deploy release at WashU | 2d | 2007-11-12 A | 2007-11-13 A | 35 | 100% |  |  |  |  |  |  | start no earlier than 2007-11-12 | hrishikesh_rajpathak | 16h | 16h |
| 37 | 1.2 | **Ongoing Features** | 85d | 2007-10-03 A | 2008-01-31 |  | 70% | 25.5d |  |  |  | 967d |  |  |  | 1152h | 1008.8h |
| 38 | 1.2.1 | **Providing security credentials fordata services** | 78d | 2007-10-03 A | 2008-01-22 |  | 99% | 0.96d | 2007-08-06 | 2007-09-11 | 25d | 974d |  |  |  | 584h | 576.8h |
| 39 | 1.2.1.1 | Service without Security | 10d | 2007-10-03 A | 2007-10-16 A |  | 100% |  |  |  |  |  |  | start no earlier than 2007-10-01 | hrishikesh_rajpathak | 80h | 80h |
| 40 | 1.2.1.2 | Investigate secure service + KT | 7d | 2007-10-29 A | 2007-11-07 A |  | 100% |  |  |  |  |  |  | start no earlier than 2007-10-29 | hrishikesh_rajpathak | 56h | 56h |
| 41 | 1.2.1.3 | Deploy caTissue 1.2 | 16d | 2007-11-20 A | 2007-12-18 A | 51 | 100% |  |  |  |  |  |  |  | hrishikesh_rajpathak | 128h | 128h |
| 42 | 1.2.1.4 | Secure caTissue service | 7d | 2007-12-19 A | 2007-12-27 A |  | 100% |  |  |  |  |  |  | start no earlier than 2007-12-20 | chetan_patil | 56h | 56h |
| 43 | 1.2.1.5 | Deploy Service to Jboss (LSD) | 9d | 2008-01-10 A | 2008-01-22 |  | 90% | 0.9d |  |  |  | 974d |  |  | chetan_patil | 72h | 64.8h |
| 44 | 1.2.1.6 | **Invoke secure service** | 27d | 2007-10-30 A | 2007-12-07 A |  | 100% |  | 2007-08-06 | 2007-08-29 | 15d |  |  |  |  | 192h | 192h |
| 45 | 1.2.1.6.1 | Investigation on secure service + deployment | 7d | 2007-10-30 A | 2007-11-14 A |  | 100% |  |  |  |  |  |  | start no earlier than 2007-10-30 | chetan_patil | 56h | 56h |
| 46 | 1.2.1.6.2 | Making container secure | 3d | 2007-11-15 A | 2007-11-19 A | 45 | 100% |  |  |  |  |  |  |  | chetan_patil | 24h | 24h |
| 47 | 1.2.1.6.3 | Deploy secure service | 4d | 2007-11-20 A | 2007-11-23 A | 46 | 100% |  |  |  |  |  |  |  | chetan_patil | 32h | 32h |
| 48 | 1.2.1.6.4 | Querying secure service | 10d | 2007-11-26 A | 2007-12-07 A | 47 | 100% |  |  |  |  |  |  |  | chetan_patil | 80h | 80h |
| 49 | 1.2.2 | **ICR** | 83.4d | 2007-10-04 A | 2008-01-31 | 14 | 54% | 38.49d | 2007-09-12 | 2007-10-09 | 20d | 967d |  |  |  | 568h | 432h |
| 50 | 1.2.2.1 | **CNAT Analytical service** | 57d | 2007-11-14 A | 2008-01-31 |  | 33% | 38d |  |  |  | 967d |  |  |  | 104h | 64h |
| 51 | 1.2.2.1.1 | Verify the mode sytactically (caCORE rules etc) | 4d | 2007-11-14 A | 2007-11-19 A | 36 | 100% |  |  |  |  |  |  | start no earlier than 2007-11-19 | hrishikesh_rajpathak | 32h | 32h |
| 52 | 1.2.2.1.2 | Understand mapping of CNAT model to CNAT cmd line param | 4d | 2007-12-07 A | 2007-12-12 A |  | 100% |  |  |  |  |  |  | start no earlier than 2007-12-07 | Jasbir | 32h | 32h |
| 53 | 1.2.2.1.3 | Convert CNAT service input into files needed by CNAT tool | 3d | 2007-12-13 | 2007-12-17 | 52 |  |  |  |  |  | 987d | 0d |  |  |  |  |
| 54 | 1.2.2.1.4 | Call CNAT tool | 2d | 2007-12-18 | 2007-12-19 | 53 |  |  |  |  |  | 987d | 0d |  |  |  |  |
| 55 | 1.2.2.1.5 | Understand mapping of CNAT tool op file to CNAT service output | 3d | 2007-12-20 | 2007-12-24 | 54 |  |  |  |  |  | 987d | 0d |  |  |  |  |
| 56 | 1.2.2.1.6 | Convert CNAT toold output files to CNAT service output | 3d | 2007-12-25 | 2007-12-27 | 55 |  |  |  |  |  | 987d | 20d |  |  |  |  |
| 57 | 1.2.2.1.7 | create service + integrate with tool | 3d | 2008-01-25 | 2008-01-29 | 56, 112 |  |  |  |  |  | 967d | 0d |  | hrishikesh_rajpathak | 24h |  |
| 58 | 1.2.2.1.8 | deploy the service | 2d | 2008-01-30 | 2008-01-31 | 57 |  |  |  |  |  | 967d |  |  | hrishikesh_rajpathak | 16h |  |

Notes:
- 27: Edit button (slide no 46) / copy (use clipboard) / paste (To newly added columns) / Add Column / Delete Column (Newly added columns only P2) / Always show Export/Filter options + formulas (P3) / count of distinct values
- 29: (Just a spreadsheet operations) + show all column , select the required columns
- 30: Filter on BioDataCube / count of distinct values

| ID | WBS | Task | Duration | Start | Finish | Predecessors | Complete | Remaining | Baseline start | Baseline finish | Baseline duration | Total slack | Free slack | Constraint | Resources | Work | Actual work | Text1 |
| --- | --- | --- | --- | --- | --- | --- | --- | --- | --- | --- | --- | --- | --- | --- | --- | --- | --- | --- |
| 59 | 1.2.2.2 | **Visualizer (Copy Number viewer)** | 44.4d | 2007-10-04 A | 2007-12-07 |  | 35% | 29d |  |  |  | 1006d |  |  |  | 104h | 104h |  |
| 60 | 1.2.2.2.1 | Design | 2d | 2007-11-15 A | 2007-11-16 A |  | 100% |  |  |  |  |  |  | start no earlier than 2007-11-15 | Jasbir | 16h | 16h |  |
| 61 | 1.2.2.2.2 | Visualizer design integration | 4d | 2007-11-19 A | 2007-11-22 A | 60 | 100% |  |  |  |  |  |  |  |  |  |  |  |
| 62 | 1.2.2.2.3 | Visualizer bug fixes | 5d | 2007-11-23 A | 2007-11-29 A | 61 | 100% |  |  |  |  |  |  |  | Rajesh | 40h | 40h |  |
| 63 | 1.2.2.2.4 | Design of convert CNAT service output to visualizer input | 6d | 2007-11-30 A | 2007-12-07 A | 62 | 100% |  |  |  |  |  |  |  | Rajesh | 48h | 48h |  |
| 64 | 1.2.2.2.5 | Coding to convert CNAT service output to visualizer input | 5d | 2007-10-04 | 2007-10-11 |  |  |  |  |  |  | 1045.4d |  |  |  |  |  |  |
| 65 | 1.2.2.2.6 | Integration | 2d | 2007-10-04 | 2007-10-08 |  |  |  |  |  |  | 1048.4d |  |  |  |  |  |  |
| 66 | 1.2.2.2.7 | implementation | 25d | 2007-10-04 | 2007-11-12 |  |  |  |  |  |  | 1025.4d |  |  |  |  |  |  |
| 67 | 1.2.2.3 | **Algorithm Development** | 36d | 2007-10-23 A | 2007-12-13 |  | 90% | 3.48d |  |  |  | 1002d |  |  |  | 152h | 128h |  |
| 68 | 1.2.2.3.1 | Segment Overlap | 4d | 2007-10-23 A | 2007-10-26 A |  | 100% |  |  |  |  |  |  |  | srinath_k | 32h | 32h |  |
| 69 | 1.2.2.3.2 | LOH algorithm | 27d | 2007-10-29 A | 2007-12-13 | 68 | 89% | 3d |  |  |  | 1002d |  | start no earlier than 2007-10-22 | srinath_k | 120h | 96h |  |
| 70 | 1.2.2.4 | **GenePattern** | 30d | 2007-12-17 A | 2008-01-25 |  | 65% | 10.38d |  |  |  | 971d |  |  |  | 208h | 136h |  |
| 71 | 1.2.2.4.1 | Install genePattern + understanding | 3d | 2007-12-17 A | 2007-12-19 A | 63 | 100% |  |  |  |  |  |  | start no earlier than 2007-12-17 | Rajesh | 24h | 24h |  |
| 72 | 1.2.2.4.2 | Run genepattern for sample scenarios (from client and java) | 10d | 2007-12-20 A | 2008-01-09 A | 71 | 100% |  |  |  |  |  |  |  | Rajesh | 80h | 80h |  |
| 73 | 1.2.2.4.3 | Design to convert genepattern service input to tool input | 5d | 2007-12-24 | 2007-12-28 |  |  |  |  |  |  | 986d | 8d | start no earlier than 2007-12-24 | Jasbir | 40h |  |  |
| 74 | 1.2.2.4.4 | Convert genepattern service input to tool input | 8d | 2008-01-10 A | 2008-01-25 | 73, 72 | 50% | 4d |  |  |  | 971d |  |  | Rajesh | 64h | 32h |  |
| 75 | 1.3 | Understanding caGrid analytical service creation | 5d | 2007-12-31 A | 2008-01-04 A |  | 100% |  |  |  |  |  |  |  | Rajesh | 40h | 40h |  |
| 76 | 1.4 | Resolving Introduce model to service conversion issues | 4d | 2008-01-16 A | 2008-01-21 A |  | 100% |  |  |  |  |  |  | start no earlier than 2008-01-16 | Rajesh | 32h | 32h |  |
| 77 | 1.5 | **Mile Stone 2** | 69d | 2007-10-29 A | 2008-02-04 | 2 | 71% | 19.94d | 2007-10-10 | 2008-08-05 | 215d | 965d |  |  |  | 1714h | 1389.37h | Oct-Nov |
| 78 | 1.5.1 | **Knowledge Transfer** | 54d | 2007-10-29 A | 2008-01-14 A |  | 100% |  |  |  |  |  |  |  |  | 50h | 50h |  |
| 79 | 1.5.1.1 | Result Screen design + BDQ UI | 0.5d | 2007-10-30 A | 2007-10-30 A |  | 100% |  |  |  |  |  |  | start no earlier than 2007-10-30 | Rahul Ner; deepak_shingan | 6h | 6h |  |
| 80 | 1.5.1.2 | Partial relavance based search | 0.25d | 2007-10-29 A | 2007-10-29 A |  | 100% |  |  |  |  |  |  | start no earlier than 2007-10-29 | Rahul Ner; chetan_patil | 3h | 3h |  |
| 81 | 1.5.1.3 | Java web start | 0.25d | 2007-10-30 A | 2007-10-30 A |  | 100% |  |  |  |  |  |  | start no earlier than 2007-10-30 | Rahul Ner [50%]; atul_jawale | 3h | 3h |  |
| 82 | 1.5.1.4 | ICR | 0.5d | 2007-11-02 A | 2007-11-02 A |  | 100% |  |  |  |  |  |  | start no earlier than 2007-10-31 | Rahul Ner; chandrakant_talele; Jasbir | 6h | 6h |  |
| 83 | 1.5.1.5 | Basic CQL query | 2d | 2008-01-11 A | 2008-01-14 A | 143 | 100% |  |  |  |  |  |  |  | deepak_shingan; srinath_k | 32h | 32h |  |

| ID | WBS | Task | Duration | Start | Finish | Predecessors | Complete | Remaining | Baseline start | Baseline finish | Baseline duration | Total slack | Free slack | Constraint | Resources | Work | Actual work |
| --- | --- | --- | --- | --- | --- | --- | --- | --- | --- | --- | --- | --- | --- | --- | --- | --- | --- |
| 84 | 1.5.2 | **Spreadsheet component** | 53d | 2007-11-12 A | 2008-01-23 |  | 98% | 1.18d |  |  |  | 973d |  |  |  | 360h | 352h |
| 85 | 1.5.2.1 | Spread sheet design | 3d | 2007-11-12 A | 2007-11-14 A |  | 100% |  |  |  |  |  |  | start no earlier than 2007-11-05 | Jasbir | 24h | 24h |
| 86 | 1.5.2.2 | Spreadsheet implementation | 4d | 2007-11-19 A | 2007-11-22 A | 60 | 100% |  |  |  |  |  |  |  | Jasbir | 32h | 32h |
| 87 | 1.5.2.3 | Incorporate UE review comments | 5d | 2007-11-23 A | 2007-11-29 A | 86 | 100% |  |  |  |  |  |  |  | Jasbir | 40h | 40h |
| 88 | 1.5.2.4 | Changes in design | 5d | 2007-11-30 A | 2007-12-06 A | 87 | 100% |  |  |  |  |  |  |  | Jasbir | 40h | 40h |
| 89 | 1.5.2.5 | Incorporate comments + resolve bugs | 5d | 2007-12-13 A | 2007-12-21 A | 52 | 100% |  |  |  |  |  |  |  | Jasbir | 40h | 40h |
| 90 | 1.5.2.6 | Integration with existing screens | 5d | 2007-12-10 A | 2007-12-14 A | 88 | 100% |  |  |  |  |  |  |  | deepak_shingan | 40h | 40h |
| 91 | 1.5.2.7 | UE comments on filters + spreadsheet | 11d | 2007-12-17 A | 2008-01-02 A | 90 | 100% |  |  |  |  |  |  |  | deepak_shingan | 88h | 88h |
| 92 | 1.5.2.8 | Save user columns | 7d | 2008-01-15 A | 2008-01-23 | 62 | 86% | 1d |  |  |  | 973d |  | start no earlier than 2008-01-15 | deepak_shingan | 56h | 48h |
| 93 | 1.5.3 | **Module Setup (Admin)** | 15d | 2007-11-26 A | 2007-12-14 A |  | 100% |  |  |  |  |  |  |  |  | 104h | 104h |
| 94 | 1.5.3.1 | Folder structure, Technology, Verify HTML to JSP | 5d | 2007-11-26 A | 2007-11-30 A |  | 100% |  |  |  |  |  |  | start no earlier than 2007-11-26 | atul_jawale | 40h | 40h |
| 95 | 1.5.3.2 | Understanding pages, Struts2.0 | 3d | 2007-12-05 A | 2007-12-07 A |  | 100% |  |  |  |  |  |  | start no earlier than 2007-12-05 | Lalit | 24h | 24h |
| 96 | 1.5.3.3 | Build script, deployment | 5d | 2007-12-10 A | 2007-12-14 A | 95 | 100% |  |  |  |  |  |  |  | Lalit | 40h | 40h |
| 97 | 1.5.4 | Bug fixing for Milestone1 | 10d | 2007-11-23 A | 2007-12-28 A |  | 100% |  |  |  |  |  |  | start no earlier than 2007-11-23 | deepak_shingan | 88h | 88h |
| 98 | 1.5.5 | **Update Technology Stack** | 15d | 2007-12-31 A | 2008-01-18 |  | 80% | 3d |  |  |  | 976d |  |  |  | 100h | 88h |
| 99 | 1.5.5.1 | Migrating to Hibernate-3 DE release | 4d | 2007-12-31 A | 2008-01-03 A | 42 | 100% |  |  |  |  |  |  | start no earlier than 2007-12-31 | chetan_patil | 32h | 32h |
| 100 | 1.5.5.2 | Test + Report saving Object attributes (Biodatacube) | 2d | 2008-01-08 A | 2008-01-09 A |  | 100% |  |  |  |  |  |  | start no earlier than 2008-01-08 | chetan_patil | 16h | 16h |
| 101 | 1.5.5.3 | Jboss 4.0.5 GA | 2d | 2008-01-04 A | 2008-01-07 A |  | 100% |  |  |  |  |  |  | start no earlier than 2008-01-04 | chetan_patil | 16h | 16h |
| 102 | 1.5.5.4 | Java 1.6 | 2d | 2008-01-07 A | 2008-01-08 A |  | 100% |  |  |  |  |  |  | start no earlier than 2008-01-07 | Lalit | 16h | 16h |
| 103 | 1.5.5.5 | Flex Training | 5d | 2008-01-14 A | 2008-01-18 |  | 40% | 3d |  |  |  | 976d |  | start no earlier than 2008-01-14 | Lalit [50%] | 20h | 8h |
| 104 | 1.5.6 | **Service instance to query (Admin)** | 40d | 2007-11-30 A | 2008-01-24 |  | 77% | 9.23d | 2008-08-06 | 2008-09-04 | 22d | 972d |  |  |  | 208h | 160h |
| 105 | 1.5.6.1 | Design | 2d | 2007-11-30 A | 2007-12-03 A |  | 100% |  |  |  |  |  |  |  | hrishikesh_rajpathak | 16h | 16h |
| 106 | 1.5.6.2 | UI implementation (JSP) | 5d | 2007-12-03 A | 2007-12-12 A | 105 | 100% |  |  |  |  |  |  |  | atul_jawale | 40h | 40h |
| 107 | 1.5.6.3 | Get services using index service | 3d | 2007-12-19 A | 2007-12-21 A | 41 | 100% |  |  |  |  |  |  |  | hrishikesh_rajpathak | 24h | 24h |
| 108 | 1.5.6.4 | Pagination component | 3d | 2007-12-13 A | 2007-12-17 A |  | 100% |  |  |  |  |  |  | start no earlier than 2007-11-13 | atul_jawale | 24h | 24h |
| 109 | 1.5.6.5 | Design Saving user and admin settings | 2d | 2007-12-24 A | 2007-12-25 A | 105, 107 | 100% |  |  |  |  |  |  |  | hrishikesh_rajpathak | 16h | 16h |
| 110 | 1.5.6.6 | Implementation saving user and admin settings | 4d | 2008-01-17 | 2008-01-22 | 126 |  |  |  |  |  | 969d | 0d | start no earlier than 2008-01-17 | hrishikesh_rajpathak | 32h |  |
| 111 | 1.5.6.7 | UE comments + resolution | 5d | 2007-12-18 A | 2007-12-24 A |  | 100% |  |  |  |  |  |  | start no earlier than 2007-12-18 | atul_jawale | 40h | 40h |
| 112 | 1.5.6.8 | Changes in existing query building | 2d | 2008-01-23 | 2008-01-24 | 110 |  |  |  |  |  | 972d |  | start no earlier than 2008-01-14 | hrishikesh_rajpathak | 16h |  |

Notes:
- 104: With setting for: Admin, User, Query / Configurin service URL, caB2B clinet URL etc.Ability to configure the applications used for metadata serach

| ID | WBS | Task | Duration | Start | Finish | Predecessors | Complete | Remaining | Baseline start | Baseline finish | Baseline duration | Total slack | Free slack | Constraint | Resources | Work | Actual work |
| --- | --- | --- | --- | --- | --- | --- | --- | --- | --- | --- | --- | --- | --- | --- | --- | --- | --- |
| 113 | 1.5.7 | **Creating and save categories (Admin)** | 30d | 2007-12-25 A | 2008-02-04 |  | 56% | 13.33d | 2008-01-15 | 2008-02-04 | 15d | 965d |  |  |  | 288h | 160h |
| 114 | 1.5.7.1 | wireframes + understanding | 3d | 2007-12-25 A | 2007-12-27 A | 111 | 100% |  |  |  |  |  |  |  | atul_jawale | 24h | 24h |
| 115 | 1.5.7.2 | UI implementation (exception DAG) | 8d | 2007-12-28 A | 2008-01-09 A | 114 | 100% |  |  |  |  |  |  |  | atul_jawale | 64h | 64h |
| 116 | 1.5.7.3 | Understand Flex based DAG implementation | 12d | 2007-12-25 A | 2008-01-23 | 122 | 75% | 3d |  |  |  | 965d | 0d |  | Lalit | 96h | 72h |
| 117 | 1.5.7.4 | Integrate Flex DAG | 4d | 2008-01-24 | 2008-01-29 | 116 |  |  |  |  |  | 969d |  |  | Lalit | 32h |  |
| 118 | 1.5.7.5 | Understand DE API for category creation | 4d | 2008-01-23 | 2008-01-28 |  |  |  |  |  |  | 965d | 0d | start no earlier than 2008-01-23 | chetan_patil | 32h |  |
| 119 | 1.5.7.6 | Save Category Backend using DE objects | 5d | 2008-01-29 | 2008-02-04 | 118 |  |  |  |  |  | 965d |  |  | chetan_patil | 40h |  |
| 120 | 1.5.8 | **Loaing caDSR models (Admin)** | 29d | 2007-12-11 A | 2008-01-18 A |  | 100% |  | 2008-02-05 | 2008-03-05 | 22d |  |  |  |  | 292h | 292h |
| 121 | 1.5.8.1 | Wireframes | 1d | 2007-12-17 A | 2007-12-17 A | 96 | 100% |  |  |  |  |  |  |  | Lalit | 8h | 8h |
| 122 | 1.5.8.2 | UI Implementation | 5d | 2007-12-18 A | 2007-12-24 A | 121 | 100% |  |  |  |  |  |  |  | Lalit | 40h | 40h |
| 123 | 1.5.8.3 | Getting Project Info from caDSR | 4d | 2007-12-11 A | 2008-01-15 A | 48 | 100% |  |  |  |  |  |  | start no earlier than 2007-12-11 | chetan_patil | 32h | 32h |
| 124 | 1.5.8.4 | Design Interfaces between UI and backend | 2d | 2007-12-26 A | 2007-12-27 A | 109 | 100% |  |  |  |  |  |  |  | hrishikesh_rajpathak | 16h | 16h |
| 125 | 1.5.8.5 | Getting model for selected projects | 5d | 2007-12-28 A | 2008-01-04 A | 124 | 100% |  |  |  |  |  |  |  | hrishikesh_rajpathak | 40h | 40h |
| 126 | 1.5.8.6 | Loading model+ paths (online) | 6d | 2008-01-07 A | 2008-01-16 A | 125 | 100% |  |  |  |  |  |  |  | hrishikesh_rajpathak | 48h | 48h |
| 127 | 1.5.8.7 | Search in model UI | 3d | 2008-01-09 A | 2008-01-11 A |  | 100% |  |  |  |  |  |  | start no earlier than 2008-01-09 | Lalit | 24h | 24h |
| 128 | 1.5.8.8 | UE Comments + enhancements | 5d | 2008-01-14 A | 2008-01-18 A | 127 | 100% |  |  |  |  |  |  |  | Lalit | 28h | 28h |
| 129 | 1.5.8.9 | Wait +feedback page | 7d | 2008-01-10 A | 2008-01-18 A | 115 | 100% |  |  |  |  |  |  |  | atul_jawale | 56h | 56h |
| 130 | 1.5.9 | **Documentation** | 25d | 2007-11-12 A | 2007-12-14 |  | 4% | 23.96d |  |  |  | -24d | 0d |  |  | 8h | 8h |
| 131 | 1.5.9.1 | Documentation M1 | 8d | 2007-11-14 | 2007-11-23 |  |  |  |  |  |  | -33.92d | 0d |  |  |  |  |
| 132 | 1.5.9.2 | Documentation M2 | 15d | 2007-11-26 | 2007-12-14 | 131 |  |  |  |  |  | -33.92d | 0d |  |  |  |  |
| 133 | 1.5.9.3 | Save Query Documentation | 1d | 2007-11-12 A | 2007-11-12 A |  | 100% |  |  |  |  |  |  | start no earlier than 2007-11-12 | deepak_shingan | 8h | 8h |
| 134 | 1.5.10 | **QA tasks** | 48d | 2007-11-21 A | 2008-01-25 |  | 34% | 31.62d |  |  |  | 971d |  |  |  | 216h | 87.37h |
| 135 | 1.5.10.1 | Induction | 3d | 2007-11-21 A | 2007-11-23 A |  | 100% |  |  |  |  |  |  |  | Madhumita | 24h | 24h |
| 136 | 1.5.10.2 | QA on milestone 1 | 6d | 2007-11-26 A | 2007-12-03 A | 135 | 100% |  |  |  |  |  |  |  | Madhumita | 48h | 48h |
| 137 | 1.5.10.3 | Write Test cases | 12d | 2007-12-10 A | 2008-01-10 | 136 | 16% | 10.08d |  |  |  | 971d | 0d |  | Madhumita | 96h | 15.37h |
| 138 | 1.5.10.4 | QA cycle | 6d | 2008-01-11 | 2008-01-18 | 137 |  |  |  |  |  | 971d | 0d |  | Madhurima | 48h |  |
| 139 | 1.5.10.5 | Bug fixing + deployment | 5d | 2008-01-21 | 2008-01-25 | 138 |  |  |  |  |  | 971d |  |  |  |  |  |

Notes:
- 113: It it similar to parameterixed query, screen will be similar to add limit page / UE to change slide 72, it should be similar to parametrized query
- 120: Admin will be shown all avalible models using discovery. Then selected models will be loaded

| ID | WBS | Task | Duration | Start | Finish | Predecessors | Complete | Remaining | Baseline start | Baseline finish | Baseline duration | Total slack | Free slack | Constraint | Resources | Work | Actual work | Text1 |
| --- | --- | --- | --- | --- | --- | --- | --- | --- | --- | --- | --- | --- | --- | --- | --- | --- | --- | --- |
| 140 | 1.6 | **Mile Stone 3** | 103d? | 2007-10-17 A | 2008-03-11 | 132 | 7% | 95.95d? | 2008-08-06 | 2009-05-28 | 212d | 0d |  |  |  | 202h | 162h | Dec-Jan |
| 141 | 1.6.1 | Load model offline support | 1d? | 2007-12-17 | 2007-12-17 |  |  |  |  |  |  | 61d |  |  |  |  |  |  |
| 142 | 1.6.2 | **Create Data View (CDC by Admin)** | 64d | 2007-10-17 A | 2008-01-16 |  | 45% | 34.91d |  |  |  | 39d |  |  |  | 82h | 82h |  |
| 143 | 1.6.2.1 | Requirment Clarification | 3d | 2008-01-08 A | 2008-01-10 A |  | 100% |  |  |  |  |  |  |  | deepak_shingan | 24h | 24h |  |
| 144 | 1.6.2.2 | develop wireframes | 1.5d | 2007-11-05 A | 2007-11-13 A |  | 100% |  |  |  |  |  |  | finish no earlier than 2007-11-13 | chandrakant_talele [50%] | 6h | 6h |  |
| 145 | 1.6.2.3 | design backend | 3d | 2007-10-17 A | 2007-10-19 A |  | 100% |  |  |  |  |  |  | start no earlier than 2007-10-17 | srinath_k [50%] | 12h | 12h |  |
| 146 | 1.6.2.4 | coding for backend(category classes changes) | 5d | 2007-10-22 A | 2007-10-26 A | 145 | 100% |  |  |  |  |  |  | start no earlier than 2007-10-22 | atul_jawale | 40h | 40h |  |
| 147 | 1.6.2.5 | deveople screen to create CDC | 10d | 2007-12-17 | 2007-12-28 |  |  |  |  |  |  | 52d |  | start no earlier than 2007-12-13 |  |  |  |  |
| 148 | 1.6.2.6 | Integrate with common admin module | 5d | 2008-01-10 | 2008-01-16 |  |  |  |  |  |  | 39d |  | start no earlier than 2008-01-10 |  |  |  |  |
| 149 | 1.6.3 | **Data View** | 66d | 2007-10-31 A | 2008-02-01 |  | 67% | 22d |  |  |  | 27d |  |  |  | 120h | 80h |  |
| 150 | 1.6.3.1 | finding matching CDC while opeing experiment | 9d | 2007-11-01 A | 2007-11-23 A |  | 100% |  |  |  |  |  |  | finish no earlier than 2007-11-23 | atul_jawale | 72h | 72h |  |
| 151 | 1.6.3.2 | Transform tree to spreadsheet | 1d | 2007-10-31 A | 2007-10-31 A |  | 100% |  |  |  |  |  |  | start no earlier than 2007-10-31 | atul_jawale | 8h | 8h |  |
| 152 | 1.6.3.3 | data population for CDC | 5d | 2008-01-28 | 2008-02-01 |  |  |  |  |  |  | 27d |  | start no earlier than 2008-01-28 | deepak_shingan | 40h |  |  |
| 153 | 1.6.4 | **Home page links** | 1d? | 2007-12-17 | 2007-12-17 |  |  |  |  |  |  | 61d |  |  |  |  |  |  |
| 154 | 1.6.4.1 | Experiment link | 1d? | 2007-12-17 | 2007-12-17 |  |  |  |  |  |  | 61d |  |  |  |  |  |  |
| 155 | 1.6.4.2 | Category links | 1d? | 2007-12-17 | 2007-12-17 |  |  |  |  |  |  | 61d |  |  |  |  |  |  |
| 156 | 1.6.4.3 | Save query | 1d? | 2007-12-17 | 2007-12-17 |  |  |  |  |  |  | 61d |  |  |  |  |  |  |
| 157 | 1.6.5 | **Convert 3D to 2D data** | 1d? | 2007-12-17 | 2007-12-17 |  |  |  | 2007-12-14 | 2008-01-14 | 22d | 61d |  |  |  |  |  |  |
| 158 | 1.6.5.1 | **Admin to specify the transformation** | 1d? | 2007-12-17 | 2007-12-17 |  |  |  |  |  |  | 61d |  |  |  |  |  |  |
| 159 | 1.6.5.1.1 | Wireframes | 1d? | 2007-12-17 | 2007-12-17 |  |  |  |  |  |  | 61d |  |  |  |  |  |  |
| 160 | 1.6.5.1.2 | UI implementation | 1d? | 2007-12-17 | 2007-12-17 |  |  |  |  |  |  | 61d |  |  |  |  |  |  |
| 161 | 1.6.5.1.3 | Save the transformation | 1d? | 2007-12-17 | 2007-12-17 |  |  |  |  |  |  | 61d |  |  |  |  |  |  |
| 162 | 1.6.5.2 | Transformation backend | 1d? | 2007-12-17 | 2007-12-17 |  |  |  |  |  |  | 61d |  |  |  |  |  |  |
| 163 | 1.6.6 | **Discovering Analytical services dynamically** | 21d | 2007-12-17 | 2008-01-14 |  |  |  | 2007-10-10 | 2007-11-07 | 21d | 41d |  |  |  |  |  |  |
| 164 | 1.6.6.1 | Investigate on AS metadata | 9d | 2007-12-17 | 2007-12-27 |  |  |  | 2007-10-10 | 2007-10-22 | 9d | 41d | 0d |  |  |  |  |  |
| 165 | 1.6.6.2 | load input output model for service | 5d | 2007-12-28 | 2008-01-03 | 164 |  |  | 2007-10-23 | 2007-10-29 | 5d | 41d | 0d |  |  |  |  |  |
| 166 | 1.6.6.3 | test the service | 7d | 2008-01-04 | 2008-01-14 | 165 |  |  | 2007-10-30 | 2007-11-07 | 7d | 41d |  |  |  |  |  |  |

Notes:
- 153: Make links on home page (left hand side panel) functional
- 154: Show only recent experiments or all? if only recent then need to add timestamp field to experiment and update it on each access
- 155: Show only popular categories or all? if only popular to be shown then need to add some info along with category and update it each time when that category is used in query
- 156: Currently all the queries are shown. Do we need to shoe only recently used? if yes, need to add timestamp info and need to update it on each access
- 157: S-> molecular Event1 and 2 show then as spreadsheet with row as specimen1,2,3 and columns as ME1 col1, ME1 col2,ME2 col1, ME2 col2, This is only for one level in tree (association)

| ID | WBS | Task | Duration | Start | Finish | Predecessors | Baseline start | Baseline finish | Baseline duration | Total slack | Free slack | Text1 |
| --- | --- | --- | --- | --- | --- | --- | --- | --- | --- | --- | --- | --- |
| 167 | 1.6.7 | **Define output view (3rd screen)** | 28d | 2007-12-17 | 2008-01-23 |  | 2007-11-08 | 2007-12-13 | 26d | 34d |  |  |
| 168 | 1.6.7.1 | Understand requirement | 1d | 2007-12-17 | 2007-12-17 |  |  |  |  | 34d | 0d |  |
| 169 | 1.6.7.2 | develop wireframes | 2d | 2007-12-18 | 2007-12-19 | 168 | 2007-11-08 | 2007-11-08 | 1d | 34d | 0d |  |
| 170 | 1.6.7.3 | develop screen | 10d | 2007-12-20 | 2008-01-02 | 169 | 2007-11-09 | 2007-11-22 | 10d | 34d | 0d |  |
| 171 | 1.6.7.4 | chages in query generation | 15d | 2008-01-03 | 2008-01-23 | 170 | 2007-11-23 | 2007-12-13 | 15d | 34d |  |  |
| 172 | 1.6.8 | Connecting two categories | 7d | 2007-12-17 | 2007-12-25 |  | 2008-03-06 | 2008-03-14 | 7d | 55d |  |  |
| 173 | 1.6.9 | caArray category | 45d | 2007-12-17 | 2008-02-15 |  | 2008-09-05 | 2008-11-06 | 45d | 17d |  |  |
| 174 | 1.6.10 | Remove client jar dependency for Analytical services (AS) | 35d | 2007-12-17 | 2008-02-01 |  | 2008-11-07 | 2008-12-25 | 35d | 27d |  |  |
| 175 | 1.6.11 | Ability to configure the applications used for metadata serach | 18d | 2007-12-17 | 2008-01-09 |  | 2008-12-26 | 2009-01-20 | 18d | 0d |  |  |
| 176 | 1.6.12 | Join data list (data category) | 30d | 2007-12-17 | 2008-01-25 |  | 2009-02-11 | 2009-03-03 | 15d | 32d |  |  |
| 177 | 1.6.13 | New viewers (metadata based) for ICR | 44d | 2008-01-10 | 2008-03-11 | 175 | 2009-03-04 | 2009-04-02 | 22d | 0d |  |  |
| 178 | 1.6.14 | Authentication with our own IDP | 30d | 2007-12-17 | 2008-01-25 |  | 2009-10-30 | 2009-12-10 | 30d | 32d |  |  |
| 179 | 1.6.15 | Bug fixing | 15d | 2007-12-17 | 2008-01-04 |  |  |  |  | 47d |  |  |
| 180 | 1.6.16 | QA cycle | 5d | 2007-12-17 | 2007-12-21 |  |  |  |  | 57d |  |  |
| 181 | 1.7 | **Mile Stone 4** | 222d | 2008-03-12 | 2009-01-15 | 140 | 2009-05-29 | 2010-04-05 | 222d | 0d |  | Feb-Mar |
| 182 | 1.7.1 | Relevance based searched | 35d | 2008-03-12 | 2008-04-29 |  | 2009-05-29 | 2009-07-16 | 35d | 0d |  |  |
| 183 | 1.7.2 | pre-defined filters on attributes | 30d | 2008-04-30 | 2008-06-10 | 182 | 2009-01-21 | 2009-02-10 | 15d | 0d |  |  |
| 184 | 1.7.3 | Return derived classes when searched for base class | 30d | 2008-06-11 | 2008-07-22 | 183 | 2009-07-17 | 2009-08-27 | 30d | 0d |  |  |
| 185 | 1.7.4 | Asynchronous execution of query | 45d | 2008-07-23 | 2008-09-23 | 184 | 2009-08-28 | 2009-10-29 | 45d | 0d |  |  |
| 186 | 1.7.5 | Curating path | 30d | 2008-09-24 | 2008-11-04 | 185 | 2009-12-11 | 2010-01-21 | 30d | 0d |  |  |
| 187 | 1.7.6 | New viewers (metadata based) | 22d | 2008-11-05 | 2008-12-04 | 186 | 2010-01-22 | 2010-02-22 | 22d | 0d |  |  |
| 188 | 1.7.7 | Incorporate UE Review comments till date Part 1 | 20d | 2008-12-05 | 2009-01-01 | 187 | 2010-02-23 | 2010-03-22 | 20d | 0d |  |  |
| 189 | 1.7.8 | Define URLs for selected data for browser window viewer | 10d | 2009-01-02 | 2009-01-15 | 188 | 2010-03-23 | 2010-04-05 | 10d | 0d |  |  |
| 190 | 1.8 | **Mile Stone 5** | 365d | 2009-01-16 | 2010-06-10 | 181 | 2010-04-06 | 2011-08-29 | 365d | 0d |  | NA |
| 191 | 1.8.1 | View the existing data list | 22d | 2009-01-16 | 2009-02-16 |  | 2010-04-06 | 2010-05-05 | 22d | 0d |  |  |
| 192 | 1.8.2 | Paths between categories and class | 35d | 2009-02-17 | 2009-04-06 | 191 | 2010-05-06 | 2010-06-23 | 35d | 0d |  |  |
| 193 | 1.8.3 | Create Experiments from the multiple existing data list. | 10d | 2009-04-07 | 2009-04-20 | 192 | 2010-06-24 | 2010-07-07 | 10d | 0d |  |  |
| 194 | 1.8.4 | User friendly names for records | 15d | 2009-04-21 | 2009-05-11 | 193 | 2010-07-08 | 2010-07-28 | 15d | 0d |  |  |
| 195 | 1.8.5 | parenthesis in DAG | 35d | 2009-05-12 | 2009-06-29 | 194 | 2010-07-29 | 2010-09-15 | 35d | 0d |  |  |
| 196 | 1.8.6 | Popularity Paths, categories | 18d | 2009-06-30 | 2009-07-23 | 195 | 2010-09-16 | 2010-10-11 | 18d | 0d |  |  |
| 197 | 1.8.7 | Edit used path (overriding curated/selected paths) | 10d | 2009-07-24 | 2009-08-06 | 196 | 2010-10-12 | 2010-10-25 | 10d | 0d |  |  |
| 198 | 1.8.8 | Define Attribute view | 10d | 2009-08-07 | 2009-08-20 | 197 | 2010-10-26 | 2010-11-08 | 10d | 0d |  |  |
| 199 | 1.8.9 | Highlight matched words in search results | 10d | 2009-08-21 | 2009-09-03 | 198 | 2010-11-09 | 2010-11-22 | 10d | 0d |  |  |
| 200 | 1.8.10 | Incorporate UE Review comments till date Part 2 | 30d | 2009-09-04 | 2009-10-15 | 199 | 2010-11-23 | 2011-01-03 | 30d | 0d |  |  |
| 201 | 1.8.11 | Partial auto connect | 45d | 2009-10-16 | 2009-12-17 | 200 | 2011-01-04 | 2011-03-07 | 45d | 0d |  |  |
| 202 | 1.8.12 | Authentication with other IDP | 15d | 2009-12-18 | 2010-01-07 | 201 | 2011-03-08 | 2011-03-28 | 15d | 0d |  |  |
| 203 | 1.8.13 | Smart metadata search (Merge CDEs across versions of same application) | 45d | 2010-01-08 | 2010-03-11 | 202 | 2011-03-29 | 2011-05-30 | 45d | 0d |  |  |
| 204 | 1.8.14 | Delete data to existing experiment | 15d | 2010-03-12 | 2010-04-01 | 203 | 2011-05-31 | 2011-06-20 | 15d | 0d |  |  |
| 205 | 1.8.15 | Add data to existing experiment | 15d | 2010-04-02 | 2010-04-22 | 204 | 2011-06-21 | 2011-07-11 | 15d | 0d |  |  |
| 206 | 1.8.16 | While creating data list, ability to add only selected attributes of records | 35d | 2010-04-23 | 2010-06-10 | 205 | 2011-07-12 | 2011-08-29 | 35d | 0d |  |  |

Notes:
- 167: It copies the original DAG build using conditions and allows user to specify more classes needed as output. It is similar to tissue core. Admin won't define view for each category. It will be smartly determined by the application. User can mark a node as "Present in view" Or "Not present in view". We need to decide should user be able to delete his limits (nodes) while defining view
- 172: DAG like view where two graphs are shown in DAG and they will be connected by pairing classes from one category to eac class in other category
- 174: Get a generic way to invoke AS similar to data services
- 175: Limited by only available services. Also is no instance is configured by admin and user then model for that instance won't searched in metadata. Even though metadata serach is performed on some specific models, user can also view experiments which has data from some other models
- 176: Connecting two datalist based on CDE match, put 2 dropdowns on slide 6 for showing classes OR put attributes + class. / This should be important in joining custom data category. Put a dropdown for Equals and not equals
- 182: Explorer and use Lucene / For entered search string, get synonyms and search for those also. Get synonyms from grid (EVS)
- 183: UE edit slide 78 , refer to caTissue for details
- 185: Asynchronous queres and their results are always saved (System-saved) Later on user can save them expliciltly or can delete it.
- 186: Along with curating, copy curated paths across different application versions
- 193: Slide 61-65
- 194: Instead of participant_1 show Smith Merry
- 198: Ability to define order in which attributes will be displayed in Add limit and result detailed page
- 199: Highlight matched words from description/name, / Highlight matched attributes in add limit page / Select matched Permissible values, / Select matched concept codes / For public id and Cocnept code show Hyper link to caDSR
- 203: Three versions of caTissue should not lead to metadata search showing 3 participant if its CDE is same in each instance, And if shown once query all three instances
- 206: what about the service that expect data fully populated ?

| ID | WBS | Task | Type | Duration | Start | Finish | Predecessors | Baseline start | Baseline finish | Baseline duration | Total slack | Free slack | Text1 |
| --- | --- | --- | --- | --- | --- | --- | --- | --- | --- | --- | --- | --- | --- |
| 207 | 1.9 | **Mile Stone 6** |  | 252d | 2010-06-11 | 2011-05-30 | 190 | 2011-08-30 | 2012-08-15 | 252d | 0d |  | NA |
| 208 | 1.9.1 | Copy/Move experiment |  | 15d | 2010-06-11 | 2010-07-01 |  | 2011-08-30 | 2011-09-19 | 15d | 0d |  |  |
| 209 | 1.9.2 | Upgrade technology stack as per caBIG |  | 45d | 2010-07-02 | 2010-09-02 | 208 | 2011-09-20 | 2011-11-21 | 45d | 0d |  |  |
| 210 | 1.9.3 | Keyboard support for application |  | 45d | 2010-09-03 | 2010-11-04 | 209 | 2011-11-22 | 2012-01-23 | 45d | 0d |  |  |
| 211 | 1.9.4 | Automatic resize of application UI for all resolution |  | 30d | 2010-11-05 | 2010-12-16 | 210 | 2012-01-24 | 2012-03-05 | 30d | 0d |  |  |
| 212 | 1.9.5 | Defining category group |  | 22d | 2010-12-17 | 2011-01-17 | 211 | 2012-03-06 | 2012-04-04 | 22d | 0d |  |  |
| 213 | 1.9.6 | Advance view |  | 35d | 2011-01-18 | 2011-03-07 | 212 | 2012-04-05 | 2012-05-23 | 35d | 0d |  |  |
| 214 | 1.9.7 | Incorporate pending UE comments |  | 60d | 2011-03-08 | 2011-05-30 | 213 | 2012-05-24 | 2012-08-15 | 60d | 0d |  |  |
| 215 | 1.10 | **Documentaion** |  | 100d | 2011-05-31 | 2011-10-17 | 214 | 2012-08-16 | 2013-01-02 | 100d | 0d |  | Apr W1 W2 W3 |
| 216 | 1.10.1 | User manual |  | 35d | 2011-05-31 | 2011-07-18 |  | 2012-08-16 | 2012-10-03 | 35d | 0d |  |  |
| 217 | 1.10.2 | Design document |  | 35d | 2011-07-19 | 2011-09-05 | 216 | 2012-10-04 | 2012-11-21 | 35d | 0d |  |  |
| 218 | 1.10.3 | Lesson learned document |  | 15d | 2011-09-06 | 2011-09-26 | 217 | 2012-11-22 | 2012-12-12 | 15d | 0d |  |  |
| 219 | 1.10.4 | Web site update |  | 15d | 2011-09-27 | 2011-10-17 | 218 | 2012-12-13 | 2013-01-02 | 15d | 0d |  |  |
| 220 | 1.11 | **Release activities** |  | 134d | 2007-08-06 | 2008-02-15 |  | 2007-08-06 | 2008-02-11 | 134d | 956d |  | Apr W4-May |
| 221 | 1.11.1 | internal QA cycle |  | 30d | 2007-08-06 | 2007-09-18 |  | 2007-08-06 | 2007-09-18 | 30d | 956d | 0d |  |
| 222 | 1.11.2 | bug fixing |  | 45d | 2007-09-19 | 2007-11-26 | 221 | 2007-09-19 | 2007-11-20 | 45d | 956d | 0d |  |
| 223 | 1.11.3 | beta release |  | 7d | 2007-11-27 | 2007-12-05 | 222 | 2007-11-21 | 2007-11-29 | 7d | 956d | 0d |  |
| 224 | 1.11.4 | Testing by end users | milestone | 0d | 2007-12-05 | 2007-12-05 | 223 | 2007-11-29 | 2007-11-29 | 0d | 956d | 0d |  |
| 225 | 1.11.5 | bug fixing (beta and end user bugs) |  | 45d | 2007-12-06 | 2008-02-06 | 224 | 2007-11-30 | 2008-01-31 | 45d | 956d | 0d |  |
| 226 | 1.11.6 | final release |  | 7d | 2008-02-07 | 2008-02-15 | 225 | 2008-02-01 | 2008-02-11 | 7d | 956d |  |  |
| 227 | 1.12 | **Performance** |  | 1d? | 2007-08-06 | 2007-08-06 |  | 2007-08-06 | 2007-08-06 | 1d? | 1089d |  | Unable to estimate |
| 228 | 1.12.1 | WS enumeration |  | 1d? | 2007-08-06 | 2007-08-06 |  | 2007-08-06 | 2007-08-06 | 1d? | 1089d |  |  |
| 229 | 1.12.2 | High throughput workgroup |  | 1d? | 2007-08-06 | 2007-08-06 |  | 2007-08-06 | 2007-08-06 | 1d? | 1089d |  |  |
| 230 | 1.12.3 | Explore caGrid FTP |  | 1d? | 2007-08-06 | 2007-08-06 |  | 2007-08-06 | 2007-08-06 | 1d? | 1089d |  |  |
| 231 | 1.12.4 | Develop prototype for compomnets for performance issues |  | 1d? | 2007-08-06 | 2007-08-06 |  | 2007-08-06 | 2007-08-06 | 1d? | 1089d |  |  |

Notes:
- 210: For entire application whereever possible like buttons,tab-ed navigation through search results
- 211: Current implementation is for target resolution 1024x768. If application is used on higher resolutions, component size does not get adjusted automatically. i.e box of size 200 pixel on 1024x768 takes 200 pixels on 1280x960
- 213: advance tab on result screen(4) / Not important as per discussion with Srikanth, Rakesh
